# 项目计划_四人仿真

Schedule from MS Project, 2026-10-19 to 2026-12-11, costs in ¥.

## Calendars

- 标准: Mon-Fri 08:00-12:00, 13:00-17:00; Sat-Sun off.

## Resources

| Resource | Rate | Notes |
| --- | --- | --- |
| 刘显尘（仿真项目经理） | 100 | 教学仿真成员和费率；每天最多8小时、每周40小时。费率不含间接分摊，实际人员和支出未确认。 / CR-004职责规则：沿用原工作量和费率；在已分配活动内提供成果交接和非作者交叉复核。实际履历、复核签字与执行证据不代填。R04参与编码/部署时由其他原分配成员互核。 |
| 成员B（仿真后端） | 120 | 教学仿真成员和费率；每天最多8小时、每周40小时。费率不含间接分摊，实际人员和支出未确认。 / CR-004职责规则：沿用原工作量和费率；在已分配活动内提供成果交接和非作者交叉复核。实际履历、复核签字与执行证据不代填。R04参与编码/部署时由其他原分配成员互核。 |
| 成员C（仿真前端） | 100 | 教学仿真成员和费率；每天最多8小时、每周40小时。费率不含间接分摊，实际人员和支出未确认。 / CR-004职责规则：沿用原工作量和费率；在已分配活动内提供成果交接和非作者交叉复核。实际履历、复核签字与执行证据不代填。R04参与编码/部署时由其他原分配成员互核。 |
| 成员D（仿真测试部署） | 90 | 教学仿真成员和费率；每天最多8小时、每周40小时。费率不含间接分摊，实际人员和支出未确认。 / CR-004职责规则：沿用原工作量和费率；在已分配活动内提供成果交接和非作者交叉复核。实际履历、复核签字与执行证据不代填。R04参与编码/部署时由其他原分配成员互核。 |
| C06 开发/测试部署资源 |  | 仿真周预算：W12小型环境；W35应用/数据库；W67独立压测与恢复资源；W8移交 |
| C07 自动化工具与算力额度 |  | 仿真额度，按开发密度分周配置，不引用真实套餐价格 |
| C08 开发工具与软件许可 |  | 仿真项目许可费用储值1500元；现有Project授权和实际采购情况未确认，不代表产品报价或已采购 |
| C09 设备租用与折旧分摊 |  | 仿真复用4台开发机，每台项目期折旧/租用分摊300元；不另行购买 |
| C10 部署培训及必要差旅 |  | 一次远程培训材料和会务400元；不安排差旅，授课人工已计任务人时 |
| C11 一般管理人员费用分摊 |  | 直接人工的5%作为一般管理支持分摊；R01项目经理本人已计直接人工，不重复计算 |
| C12 房租水电及网络分摊 |  | 仿真4人共享空间8周，每周分摊300元，覆盖房租、水电及网络 |
| C13 共享办公与设施分摊 |  | 仿真共享打印、办公耗材及设施，每周100元；不含C09设备和C12房租水电 |

## Schedule

| ID | WBS | Task | Duration | Start | Finish | Predecessors | Total slack | Free slack | Constraint | Deadline | Resources | Work | Cost | 原WBS | 计划状态 | 质量活动类别 | 质量活动与证据 | 交叉复核安排 | 质量费用分类 | 需求映射 | Text3 | 预定交付物 | 验收依据 | 责任资源ID | 相对周次 | 估算方法 | 估算成熟度 | 成本及储备控制 | 周次复核目标 | 依赖说明 |
| --- | --- | --- | --- | --- | --- | --- | --- | --- | --- | --- | --- | --- | --- | --- | --- | --- | --- | --- | --- | --- | --- | --- | --- | --- | --- | --- | --- | --- | --- | --- |
| 1 | 1 | **云南省企业就业失业数据采集系统（4人8周仿真计划）** | 40d? | 2026-10-19 | 2026-12-11 |  |  |  |  |  |  | 877h | 106,852.5 | 总计划 | V1.2 / CM-R4；模拟计划，实际执行留空 | 质量计划、过程保证与成果控制 | 16项原标准；6项QA及2项QC活动；6项度量口径与缺陷闭环。 | 4人原分配内按成果交叉复核；实际签字和结果留空。 | 预防/评估/内部缺陷/外部缺陷；原费用不重复加算。 |  |  |  |  |  |  |  |  |  |  |  |
| 2 | 1.1 | **T1 需求与项目计划** | 4d? | 2026-10-19 | 2026-10-22 |  | 0d |  |  |  |  | 48h | 4,660 | T1 |  |  |  |  |  |  |  |  |  |  |  |  |  |  |  |  |
| 3 | 1.1.1 | 核对需求范围与覆盖 | 1d? | 2026-10-19 | 2026-10-19 |  | 0d |  | start no earlier than 2026-10-19 | 2026-12-11 | 刘显尘（仿真项目经理）; 成员B（仿真后端） [50%]; 成员C（仿真前端） [50%]; 成员D（仿真测试部署） [50%] | 20h | 2,040 | T1.1 | 仿真计划，未执行 | 质量保证 | 逐项核对43项需求、WBS和AC；登记歧义及决定。 | R04牵头按具体成果安排非作者复核；同为作者时在原分配内换人。 | 预防活动（混合） | FR-01～28, NFR-01～11, IF-01～04 | 需求 | 范围说明与需求覆盖矩阵 | AC-01～14 | R01 | W1–W1 | WBS自下而上 | 模拟估算；逐周复核前提 | 按累计PV、AC、EV复核；基线变化先办理CR。 | W1–W8每周复核；W2/W4/W6/W8阶段重点复核。 |  |
| 4 | 1.1.2 | 形成WBS与项目计划初稿 | 2d? | 2026-10-20 | 2026-10-21 | 3 | 0d |  | start no earlier than 2026-10-20 | 2026-12-11 | 刘显尘（仿真项目经理） [50%]; 成员D（仿真测试部署） [12.5%] | 10h | 980 | T1.2 | 仿真计划，未执行 | 质量保证 | 计划明确质量目标、活动、责任、证据及容量假设。 | R04牵头按具体成果安排非作者复核；同为作者时在原分配内换人。 | 计划/质量预防（混合） | 项目管理 | 计划 | 范围、进度、资源、成本、质量计划 | 计划内部评审 | R01 | W1–W1 | WBS自下而上 | 模拟估算；逐周复核前提 | 按累计PV、AC、EV复核；基线变化先办理CR。 | W1–W8每周复核；W2/W4/W6/W8阶段重点复核。 | T1.1FS+0d |
| 5 | 1.1.3 | 编写测试大纲与合成数据方案 | 3d? | 2026-10-20 | 2026-10-22 | 3 | 27d | 17d | start no earlier than 2026-10-20 | 2026-12-11 | 刘显尘（仿真项目经理） [8.3%]; 成员D（仿真测试部署） [66.7%] | 18h | 1,640 | T1.3 | 仿真计划，未执行 | 质量保证 | 实现前评审测试大纲、数据、必需用例与证据规则。 | R01牵头按具体成果安排非作者复核；同为作者时在原分配内换人。 | 预防 | NFR-01～11, IF-01～04 | 质量策划 | 测试大纲、验收数据与预期答案 | AC-01～14 | R04 | W1–W1 | WBS自下而上 | 模拟估算；逐周复核前提 | 按累计PV、AC、EV复核；基线变化先办理CR。 | W1–W8每周复核；W2/W4/W6/W8阶段重点复核。 | T1.1FS+0d |
| 6 | 1.2 | **T2 设计、外部输入与计划维护** | 38d? | 2026-10-20 | 2026-12-10 |  | 0d |  |  |  |  | 104h | 10,940 | T2 |  |  |  |  |  |  |  |  |  |  |  |  |  |  |  |  |
| 7 | 1.2.1 | 总体架构与模块设计 | 2d? | 2026-10-20 | 2026-10-21 | 3 | 10d | 0d | start no earlier than 2026-10-20 | 2026-12-11 | 刘显尘（仿真项目经理） [37.5%]; 成员B（仿真后端） [75%]; 成员C（仿真前端） [37.5%]; 成员D（仿真测试部署） [12.5%] | 26h | 2,820 | T2.1 | 仿真计划，未执行 | 质量保证 | 设计、接口、状态、权限及性能前提交叉复核；版本/CR真实对应。 | R04牵头按具体成果安排非作者复核；同为作者时在原分配内换人。 | 设计/管理/预防（混合） | FR-01～28, IF-01～04 | 设计 | 总体设计与模块接口说明 | 设计评审 | R02 | W1–W1 | WBS自下而上 | 模拟估算；逐周复核前提 | 按累计PV、AC、EV复核；基线变化先办理CR。 | W1–W8每周复核；W2/W4/W6/W8阶段重点复核。 | T1.1FS+0d |
| 8 | 1.2.2 | 数据模型、版本与事务设计 | 2d? | 2026-10-22 | 2026-10-23 | 7 | 11d | 1d | start no earlier than 2026-10-22 | 2026-12-11 | 刘显尘（仿真项目经理） [25%]; 成员B（仿真后端） [75%] | 16h | 1,840 | T2.2 | 仿真计划，未执行 | 质量保证 | 设计、接口、状态、权限及性能前提交叉复核；版本/CR真实对应。 | R01牵头按具体成果安排非作者复核；同为作者时在原分配内换人。 | 设计/管理/预防（混合） | FR-02～13, FR-21, FR-25～28, NFR-09 | 设计 | 数据模型、迁移与快照审计设计 | AC-01～04, AC-09 | R02 | W1–W1 | WBS自下而上 | 模拟估算；逐周复核前提 | 按累计PV、AC、EV复核；基线变化先办理CR。 | W1–W8每周复核；W2/W4/W6/W8阶段重点复核。 | T2.1FS+0d |
| 9 | 1.2.3 | 内部接口与导出契约设计 | 2d? | 2026-10-22 | 2026-10-23 | 7 | 10d | 1d | start no earlier than 2026-10-22 | 2026-12-11 | 刘显尘（仿真项目经理） [37.5%]; 成员B（仿真后端） [12.5%]; 成员C（仿真前端） [25%]; 成员D（仿真测试部署） [25%] | 16h | 1,600 | T2.3 | 仿真计划，未执行 | 质量保证 | 设计、接口、状态、权限及性能前提交叉复核；版本/CR真实对应。 | R04牵头按具体成果安排非作者复核；同为作者时在原分配内换人。 | 设计/管理/预防（混合） | IF-01～04 | 设计 | 内部API、导出、监控和MOCK契约 | AC-06, AC-10A, AC-14 | R01 | W1–W1 | WBS自下而上 | 模拟估算；逐周复核前提 | 按累计PV、AC、EV复核；基线变化先办理CR。 | W1–W8每周复核；W2/W4/W6/W8阶段重点复核。 | T2.1FS+0d |
| 10 | 1.2.4 | 确认国家真实交换输入 | 3d? | 2026-10-26 | 2026-10-28 | 3 | 21d | 10d | start no earlier than 2026-10-26 | 2026-12-11 | 刘显尘（仿真项目经理） [25%]; 成员B（仿真后端） [16.7%] | 10h | 1,080 | T2.4 | 仿真计划，未执行 | 质量保证 | 设计、接口、状态、权限及性能前提交叉复核；版本/CR真实对应。 | R02牵头按具体成果安排非作者复核；同为作者时在原分配内换人。 | 设计/管理/预防（混合） | FR-26, IF-01 | 外部输入 | 协议版本、端点用途、认证与字段编码映射 | AC-10B | R01 | W2–W2 | WBS自下而上 | 模拟估算；逐周复核前提 | 按累计PV、AC、EV复核；基线变化先办理CR。 | W1–W8每周复核；W2/W4/W6/W8阶段重点复核。 | T1.1FS+0d |
| 11 | 1.2.5 | 维护计划与配置版本 | 36d? | 2026-10-22 | 2026-12-10 | 4 | 0d |  | start no earlier than 2026-10-22 | 2026-12-11 | 刘显尘（仿真项目经理） [12.5%] | 36h | 3,600 | T2.5 | 仿真计划，未执行 | 质量保证 | 设计、接口、状态、权限及性能前提交叉复核；版本/CR真实对应。 | R01日常登记；R04在T1.2/T4.1/T5.7原评审投入内抽查。 | 设计/管理/预防（混合） | 项目管理 | 计划迭代 | 计划修订记录、配置和文档版本 | 版本复核 | R01 | W1–W8 | WBS自下而上 | 模拟估算；逐周复核前提 | 按累计PV、AC、EV复核；基线变化先办理CR。 | W1–W8每周复核；W2/W4/W6/W8阶段重点复核。 | T1.2FS+0d |
| 12 | 1.3 | **T3 开发与运行环境** | 20d? | 2026-10-23 | 2026-11-19 |  | 8d |  |  |  |  | 355h | 36,690 | T3 |  |  |  |  |  |  |  |  |  |  |  |  |  |  |  |  |
| 13 | 1.3.1 | 建立开发与本地集成环境 | 2d? | 2026-10-23 | 2026-10-26 | 7 | 9d | 0d | start no earlier than 2026-10-23 | 2026-12-11 | 成员C（仿真前端） [25%]; 成员D（仿真测试部署） [75%] | 16h | 1,480 | T3.1 | 仿真计划，未执行 | 质量保证及开发自测 | 小批量提交与集成；非作者复核代码/配置并验证相关失败及边界场景。 | R03牵头按具体成果安排非作者复核；同为作者时在原分配内换人。 | 开发/预防（混合） | NFR-11 | 开发准备 | 项目骨架、锁定依赖与启动说明 | AC-14 | R04 | W1–W2 | WBS自下而上 | 模拟估算；逐周复核前提 | 按累计PV、AC、EV复核；基线变化先办理CR。 | W1–W8每周复核；W2/W4/W6/W8阶段重点复核。 | T2.1FS+0d |
| 14 | 1.3.2 | 实现认证、权限和角色基础 | 3d? | 2026-10-27 | 2026-10-29 | 9, 13 | 9d | 0d | start no earlier than 2026-10-27 | 2026-12-11 | 刘显尘（仿真项目经理） [37.5%]; 成员B（仿真后端） [12.5%]; 成员C（仿真前端） [16.7%]; 成员D（仿真测试部署） [8.3%] | 18h | 1,840 | T3.2 | 仿真计划，未执行 | 质量保证及开发自测 | 小批量提交与集成；非作者复核代码/配置并验证相关失败及边界场景。 | R04牵头按具体成果安排非作者复核；同为作者时在原分配内换人。 | 开发/预防（混合） | FR-01, FR-22, FR-23, NFR-06～08, IF-02 | 开发 | 会话、范围鉴权、TOTP与角色管理 | AC-05, AC-08, AC-13 | R01 | W2–W2 | WBS自下而上 | 模拟估算；逐周复核前提 | 按累计PV、AC、EV复核；基线变化先办理CR。 | W1–W8每周复核；W2/W4/W6/W8阶段重点复核。 | T2.3FS+0d; T3.1FS+0d |
| 15 | 1.3.3 | 实现字典、地区和基准管理 | 2d? | 2026-10-27 | 2026-10-28 | 8, 13 | 10d | 1d | start no earlier than 2026-10-27 | 2026-12-11 | 成员B（仿真后端） [37.5%]; 成员C（仿真前端） [18.8%] | 9h | 1,020 | T3.3 | 仿真计划，未执行 | 质量保证及开发自测 | 小批量提交与集成；非作者复核代码/配置并验证相关失败及边界场景。 | R03牵头按具体成果安排非作者复核；同为作者时在原分配内换人。 | 开发/预防（混合） | FR-28 | 开发 | 字典地区种子与基准版本功能 | AC-01, AC-03 | R02 | W2–W2 | WBS自下而上 | 模拟估算；逐周复核前提 | 按累计PV、AC、EV复核；基线变化先办理CR。 | W1–W8每周复核；W2/W4/W6/W8阶段重点复核。 | T2.2FS+0d; T3.1FS+0d |
| 16 | 1.3.4 | 实现企业资料与备案审批 | 3d? | 2026-10-30 | 2026-11-03 | 14, 15 | 10d | 1d | start no earlier than 2026-10-30 | 2026-12-11 | 刘显尘（仿真项目经理） [25%]; 成员B（仿真后端） [37.5%]; 成员C（仿真前端） [37.5%]; 成员D（仿真测试部署） [8.3%] | 26h | 2,760 | T3.4 | 仿真计划，未执行 | 质量保证及开发自测 | 小批量提交与集成；非作者复核代码/配置并验证相关失败及边界场景。 | R04牵头按具体成果安排非作者复核；同为作者时在原分配内换人。 | 开发/预防（混合） | FR-02, FR-03, FR-09 | 开发 | 资料草稿、变更备案与版本查询 | AC-01, AC-06 | R02 | W2–W3 | WBS自下而上 | 模拟估算；逐周复核前提 | 按累计PV、AC、EV复核；基线变化先办理CR。 | W1–W8每周复核；W2/W4/W6/W8阶段重点复核。 | T3.2FS+0d; T3.3FS+0d |
| 17 | 1.3.5 | 实现月报草稿、校验与提交 | 3d? | 2026-11-03 | 2026-11-05 | 16SS+1d, 19 | 9d | 0d | start no earlier than 2026-11-03 | 2026-12-11 | 刘显尘（仿真项目经理） [29.2%]; 成员B（仿真后端） [37.5%]; 成员C（仿真前端） [37.5%]; 成员D（仿真测试部署） [8.3%] | 27h | 2,860 | T3.5 | 仿真计划，未执行 | 质量保证及开发自测 | 小批量提交与集成；非作者复核代码/配置并验证相关失败及边界场景。 | R04牵头按具体成果安排非作者复核；同为作者时在原分配内换人。 | 开发/预防（混合） | FR-04, FR-05, NFR-09, IF-02 | 开发 | 月报、幂等提交与冻结快照 | AC-02 | R02 | W3–W3 | WBS自下而上 | 模拟估算；逐周复核前提 | 按累计PV、AC、EV复核；基线变化先办理CR。 | W1–W8每周复核；W2/W4/W6/W8阶段重点复核。 | T3.4SS+1d; T3.7FS+0d |
| 18 | 1.3.6 | 实现市省审核与退回重提 | 2d? | 2026-11-04 | 2026-11-05 | 17SS+1d | 9d | 1d | start no earlier than 2026-11-04 | 2026-12-11 | 刘显尘（仿真项目经理） [31.2%]; 成员B（仿真后端） [37.5%]; 成员C（仿真前端） [37.5%]; 成员D（仿真测试部署） [12.5%] | 19h | 2,000 | T3.6 | 仿真计划，未执行 | 质量保证及开发自测 | 小批量提交与集成；非作者复核代码/配置并验证相关失败及边界场景。 | R04牵头按具体成果安排非作者复核；同为作者时在原分配内换人。 | 开发/预防（混合） | FR-07, FR-08, FR-10, FR-11 | 开发 | 审核状态链、退回重提与审计 | AC-03, AC-05 | R02 | W3–W3 | WBS自下而上 | 模拟估算；逐周复核前提 | 按累计PV、AC、EV复核；基线变化先办理CR。 | W1–W8每周复核；W2/W4/W6/W8阶段重点复核。 | T3.5SS+1d |
| 19 | 1.3.7 | 实现调查期与补报授权 | 2d? | 2026-10-30 | 2026-11-02 | 14, 15 | 9d | 0d | start no earlier than 2026-10-30 | 2026-12-11 | 刘显尘（仿真项目经理） [31.2%]; 成员B（仿真后端） [31.2%]; 成员C（仿真前端） [18.8%]; 成员D（仿真测试部署） [6.2%] | 14h | 1,490 | T3.7 | 仿真计划，未执行 | 质量保证及开发自测 | 小批量提交与集成；非作者复核代码/配置并验证相关失败及边界场景。 | R04牵头按具体成果安排非作者复核；同为作者时在原分配内换人。 | 开发/预防（混合） | FR-21, FR-11 | 开发 | 调查期配置与补报窗口控制 | AC-02, AC-03 | R01 | W2–W3 | WBS自下而上 | 模拟估算；逐周复核前提 | 按累计PV、AC、EV复核；基线变化先办理CR。 | W1–W8每周复核；W2/W4/W6/W8阶段重点复核。 | T3.2FS+0d; T3.3FS+0d |
| 20 | 1.3.8 | 实现独立修订与撤销链 | 3d? | 2026-11-06 | 2026-11-10 | 18SS+1d, 8 | 8d | 0d | start no earlier than 2026-11-06 | 2026-12-11 | 刘显尘（仿真项目经理） [37.5%]; 成员B（仿真后端） [37.5%]; 成员C（仿真前端） [25%]; 成员D（仿真测试部署） [12.5%] | 27h | 2,850 | T3.8 | 仿真计划，未执行 | 质量保证及开发自测 | 小批量提交与集成；非作者复核代码/配置并验证相关失败及边界场景。 | R04牵头按具体成果安排非作者复核；同为作者时在原分配内换人。 | 开发/预防（混合） | FR-12, FR-27, NFR-09 | 开发 | 修订另存、生效、撤销与日志 | AC-04, AC-09 | R01 | W3–W4 | WBS自下而上 | 模拟估算；逐周复核前提 | 按累计PV、AC、EV复核；基线变化先办理CR。 | W1–W8每周复核；W2/W4/W6/W8阶段重点复核。 | T3.6SS+1d; T2.2FS+0d |
| 21 | 1.3.9 | 实现历史浏览和快照查询 | 2d? | 2026-11-06 | 2026-11-09 | 16, 17SS+1d | 10d | 0d | start no earlier than 2026-11-06 | 2026-12-11 | 刘显尘（仿真项目经理） [12.5%]; 成员B（仿真后端） [25%]; 成员C（仿真前端） [37.5%]; 成员D（仿真测试部署） [12.5%] | 14h | 1,460 | T3.9 | 仿真计划，未执行 | 质量保证及开发自测 | 小批量提交与集成；非作者复核代码/配置并验证相关失败及边界场景。 | R04牵头按具体成果安排非作者复核；同为作者时在原分配内换人。 | 开发/预防（混合） | FR-06, FR-09 | 开发 | 历史版本与正式提交标记查询 | AC-01, AC-05, AC-06 | R03 | W3–W4 | WBS自下而上 | 模拟估算；逐周复核前提 | 按累计PV、AC、EV复核；基线变化先办理CR。 | W1–W8每周复核；W2/W4/W6/W8阶段重点复核。 | T3.4FS+0d; T3.5SS+1d |
| 22 | 1.3.10 | 实现汇总指标与统计口径 | 2d? | 2026-11-10 | 2026-11-11 | 20SS+1d | 8d | 1d | start no earlier than 2026-11-10 | 2026-12-11 | 刘显尘（仿真项目经理） [25%]; 成员B（仿真后端） [37.5%]; 成员C（仿真前端） [25%]; 成员D（仿真测试部署） [12.5%] | 16h | 1,700 | T3.10 | 仿真计划，未执行 | 质量保证及开发自测 | 小批量提交与集成；非作者复核代码/配置并验证相关失败及边界场景。 | R04牵头按具体成果安排非作者复核；同为作者时在原分配内换人。 | 开发/预防（混合） | FR-13 | 开发 | 原始/修订口径汇总与公式复算 | AC-04, AC-07 | R02 | W4–W4 | WBS自下而上 | 模拟估算；逐周复核前提 | 按累计PV、AC、EV复核；基线变化先办理CR。 | W1–W8每周复核；W2/W4/W6/W8阶段重点复核。 | T3.8SS+1d |
| 23 | 1.3.11 | 实现条件查询与XLSX导出 | 3d? | 2026-11-09 | 2026-11-11 | 21SS+1d, 9 | 10d | 7d | start no earlier than 2026-11-09 | 2026-12-11 | 成员B（仿真后端） [25%]; 成员C（仿真前端） [37.5%]; 成员D（仿真测试部署） [25%] | 21h | 2,160 | T3.11 | 仿真计划，未执行 | 质量保证及开发自测 | 小批量提交与集成；非作者复核代码/配置并验证相关失败及边界场景。 | R04牵头按具体成果安排非作者复核；同为作者时在原分配内换人。 | 开发/预防（混合） | FR-14, FR-15, IF-03 | 开发 | 13条件查询、异步导出与鉴权下载 | AC-06, AC-09 | R03 | W4–W4 | WBS自下而上 | 模拟估算；逐周复核前提 | 按累计PV、AC、EV复核；基线变化先办理CR。 | W1–W8每周复核；W2/W4/W6/W8阶段重点复核。 | T3.9SS+1d; T2.3FS+0d |
| 24 | 1.3.12 | 实现各市取样与地区筛选 | 2d? | 2026-11-18 | 2026-11-19 | 16, 15 | 4d | 1d | start no earlier than 2026-11-18 | 2026-12-11 | 成员B（仿真后端） [18.8%]; 成员C（仿真前端） [37.5%]; 成员D（仿真测试部署） [37.5%] | 15h | 1,500 | T3.12 | 仿真计划，未执行 | 质量保证及开发自测 | 小批量提交与集成；非作者复核代码/配置并验证相关失败及边界场景。 | R04牵头按具体成果安排非作者复核；同为作者时在原分配内换人。 | 开发/预防（混合） | FR-16 | 开发 | 备案/有效上报取样与同源图表 | AC-07 | R03 | W5–W5 | WBS自下而上 | 模拟估算；逐周复核前提 | 按累计PV、AC、EV复核；基线变化先办理CR。 | W1–W8每周复核；W2/W4/W6/W8阶段重点复核。 | T3.4FS+0d; T3.3FS+0d |
| 25 | 1.3.13 | 实现两期比较与连续期趋势 | 3d? | 2026-11-17 | 2026-11-19 | 22SS+1d | 4d | 1d | start no earlier than 2026-11-17 | 2026-12-11 | 刘显尘（仿真项目经理） [41.7%]; 成员C（仿真前端） [37.5%]; 成员D（仿真测试部署） [8.3%] | 21h | 2,080 | T3.13 | 仿真计划，未执行 | 质量保证及开发自测 | 小批量提交与集成；非作者复核代码/配置并验证相关失败及边界场景。 | R04牵头按具体成果安排非作者复核；同为作者时在原分配内换人。 | 开发/预防（混合） | FR-17, FR-18 | 开发 | 样本比较、趋势和缺失语义 | AC-07 | R01 | W5–W5 | WBS自下而上 | 模拟估算；逐周复核前提 | 按累计PV、AC、EV复核；基线变化先办理CR。 | W1–W8每周复核；W2/W4/W6/W8阶段重点复核。 | T3.10SS+1d |
| 26 | 1.3.14 | 实现通知与用户管理界面 | 2d? | 2026-11-16 | 2026-11-17 | 14 | 5d | 2d | start no earlier than 2026-11-16 | 2026-12-11 | 成员B（仿真后端） [12.5%]; 成员C（仿真前端） [56.2%]; 成员D（仿真测试部署） [31.2%] | 16h | 1,590 | T3.14 | 仿真计划，未执行 | 质量保证及开发自测 | 小批量提交与集成；非作者复核代码/配置并验证相关失败及边界场景。 | R04牵头按具体成果安排非作者复核；同为作者时在原分配内换人。 | 开发/预防（混合） | FR-19, FR-20, FR-22, FR-23 | 开发 | 通知可见范围与用户角色管理 | AC-08, AC-05 | R03 | W5–W5 | WBS自下而上 | 模拟估算；逐周复核前提 | 按累计PV、AC、EV复核；基线变化先办理CR。 | W1–W8每周复核；W2/W4/W6/W8阶段重点复核。 | T3.2FS+0d |
| 27 | 1.3.15 | 实现删除恢复、脱敏与审计 | 3d? | 2026-11-11 | 2026-11-13 | 20 | 8d | 5d | start no earlier than 2026-11-11 | 2026-12-11 | 刘显尘（仿真项目经理） [12.5%]; 成员B（仿真后端） [33.3%]; 成员C（仿真前端） [20.8%]; 成员D（仿真测试部署） [29.2%] | 23h | 2,390 | T3.15 | 仿真计划，未执行 | 质量保证及开发自测 | 小批量提交与集成；非作者复核代码/配置并验证相关失败及边界场景。 | R04牵头按具体成果安排非作者复核；同为作者时在原分配内换人。 | 开发/预防（混合） | FR-25, FR-27, NFR-09 | 开发 | 删除恢复、保留计时与事件链 | AC-09, AC-13 | R02 | W4–W4 | WBS自下而上 | 模拟估算；逐周复核前提 | 按累计PV、AC、EV复核；基线变化先办理CR。 | W1–W8每周复核；W2/W4/W6/W8阶段重点复核。 | T3.8FS+0d |
| 28 | 1.3.16 | 实现运行监控与指标采集 | 2d? | 2026-10-30 | 2026-11-02 | 13, 9 | 17d | 14d | start no earlier than 2026-10-30 | 2026-12-11 | 成员B（仿真后端） [25%]; 成员C（仿真前端） [25%]; 成员D（仿真测试部署） [62.5%] | 18h | 1,780 | T3.16 | 仿真计划，未执行 | 质量保证及开发自测 | 小批量提交与集成；非作者复核代码/配置并验证相关失败及边界场景。 | R02牵头按具体成果安排非作者复核；同为作者时在原分配内换人。 | 开发/预防（混合） | FR-24, IF-04, NFR-11 | 开发 | 宿主机指标、服务状态与过期标识 | AC-14 | R04 | W2–W3 | WBS自下而上 | 模拟估算；逐周复核前提 | 按累计PV、AC、EV复核；基线变化先办理CR。 | W1–W8每周复核；W2/W4/W6/W8阶段重点复核。 | T3.1FS+0d; T2.3FS+0d |
| 29 | 1.3.17 | 实现批次冻结与MOCK交换 | 3d? | 2026-11-12 | 2026-11-16 | 22SS+1d, 9 | 7d | 0d | start no earlier than 2026-11-12 | 2026-12-11 | 成员B（仿真后端） [62.5%]; 成员C（仿真前端） [16.7%]; 成员D（仿真测试部署） [8.3%] | 21h | 2,380 | T3.17 | 仿真计划，未执行 | 质量保证及开发自测 | 小批量提交与集成；非作者复核代码/配置并验证相关失败及边界场景。 | R04牵头按具体成果安排非作者复核；同为作者时在原分配内换人。 | 开发/预防（混合） | FR-26, IF-01 | 开发 | 批次、摘要、MOCK回执与恢复 | AC-10A | R02 | W4–W5 | WBS自下而上 | 模拟估算；逐周复核前提 | 按累计PV、AC、EV复核；基线变化先办理CR。 | W1–W8每周复核；W2/W4/W6/W8阶段重点复核。 | T3.10SS+1d; T2.3FS+0d |
| 30 | 1.3.18 | 实现实际REAL协议适配 | 3d? | 2026-11-12 | 2026-11-16 | 10, 9 | 11d | 2d | start no earlier than 2026-11-12 | 2026-12-11 | 刘显尘（仿真项目经理） [62.5%]; 成员D（仿真测试部署） [12.5%] | 18h | 1,770 | T3.18 | 仿真计划，未执行 | 质量保证及开发自测 | 小批量提交与集成；非作者复核代码/配置并验证相关失败及边界场景。 | R04牵头按具体成果安排非作者复核；同为作者时在原分配内换人。 | 开发/预防（混合） | FR-26, IF-01 | 条件开发 | 实际认证、字段映射与传输适配 | AC-10B | R01 | W4–W5 | WBS自下而上 | 模拟估算；逐周复核前提 | 按累计PV、AC、EV复核；基线变化先办理CR。 | W1–W8每周复核；W2/W4/W6/W8阶段重点复核。 | T2.4FS+0d; T2.3FS+0d |
| 31 | 1.3.19 | 编写配置、部署、备份与回滚 | 3d? | 2026-10-27 | 2026-10-29 | 13, 8 | 19d | 16d | start no earlier than 2026-10-27 | 2026-12-11 | 刘显尘（仿真项目经理） [8.3%]; 成员B（仿真后端） [16.7%]; 成员D（仿真测试部署） [41.7%] | 16h | 1,580 | T3.19 | 仿真计划，未执行 | 质量保证及开发自测 | 小批量提交与集成；非作者复核代码/配置并验证相关失败及边界场景。 | R01牵头按具体成果安排非作者复核；同为作者时在原分配内换人。 | 开发/预防（混合） | NFR-04, NFR-05, NFR-11 | 开发 | 运行脚本、备份恢复与配置说明 | AC-12, AC-14 | R04 | W2–W2 | WBS自下而上 | 模拟估算；逐周复核前提 | 按累计PV、AC、EV复核；基线变化先办理CR。 | W1–W8每周复核；W2/W4/W6/W8阶段重点复核。 | T3.1FS+0d; T2.2FS+0d |

Notes:
- 1: 项目计划 V1.2 / CM-R4；修订日期2026-10-20，CR-004。 / SRS V1.2范围；4人、8周、44项活动、877人时。开工2026-10-19，任务完成2026-12-11；材料归档日期2026-12-13，具体平台和格式待确认。 / WBS活动按分资源人时×仿真费率自下而上估算；非人工和间接费用分项估算并按进度分周分配。成熟组件与自动化工具辅助投入系数保留50%，测试、评审和交付不折减；不是实际完成或真实报价。 / 成本基准106852.50元，管理储备10685.25元，总预算117537.75元，均保留既定模拟值。C14管理储备用于未识别风险，位于基准之外；RK01RK05独立应急储备尚未单列、额度待评估，不直接承诺由C14覆盖。正式量化及重分类须办理CR。 / W1W8每周复核，W2/W4/W6/W8为阶段重点复核。每轮记录真实目标、产出、偏差、遗留问题、版本与提交；不延长7日窗口或补造历史。 / 成本控制以同一截止点累计PV、AC、EV为依据；SV=EV−PV，CV=EV−AC，CPI=EV/AC。实际数据未发生时留空；AC为0时CPI不计算，不以现金少支出直接认定绩效好。 / 基线变化同步变更单源和PDF、两种计划、版本记录及真实提交证据；最终提供计划终版、变更单与提交历史截图。 / 已安排管理、环境构建、评审和测试费用；不得重复加算质量人工，不通过取消必要测试、降低验收标准或MOCK替代真实验证来抵销偏差。 / 已确认预算、任务排期、依赖、人员和工时不变。W2外部协议和验证环境仍属假设；实际条件未具备时记录影响并提出正式变更。 / 质量管理：保留SRS及16项产品质量标准，6项质量保证活动与2项成果控制活动纳入既有需求、设计、开发、测试和交付任务。6项度量口径分别记录追踪覆盖、关键必需测试、未关闭阻断严重缺陷、严重高危漏洞、性能兼容和质量问题闭环，不另设未经定义的加权总分。 / 职责与复核：44项活动沿用原责任人及工时参与。四人兼岗按具体成果安排非作者交叉复核，R04参与实现或部署的产物由其他已有参与者复核；没有合格复核人则登记未复核并由R01评估影响，不虚构独立质量部门或实际签字。 / T2.5的36人时仍全部归R01；日常跟踪由R01记录，R04在T1.2/T4.1/T5.7等已有评审分配内抽查。每轮复核和工作交接均在原投入内实施，无法满足时登记影响并走变更流程。 / 质量成本：区分预防、评估、内部缺陷和外部缺陷；是原预算的用途分类，混合任务未拆分纯质量费用，同一人时及资源费用只计一次。T4.10的56人时已含修复和回归；交付后独立维护投入未安排、金额未确定，不承诺由C14覆盖。 / 缺陷闭环：记录编号、需求/AC、影响、责任、根因、修复提交和非作者复测，合格后关闭，不合格重开。受控基线变化同步CR及版本证据。沿用SRS最终门槛，AC-10B缺失时不得标记整体通过；72小时验证不替代月可用性持续目标。 / 详细过程活动、日期、度量和实际记录见Excel质量与变更；责任矩阵见资源计划，质量费用分类见成本预算。实际执行、支出、外部身份和验收签字继续留空。
- 2: 暂时性实施规划；下属活动为计划，未登记实际完成。
- 3: 暂时性实施规划：4人、8周模拟项目计划。 / 任务：T1.1 核对需求范围与覆盖 / 需求：FR-01～28, NFR-01～11, IF-01～04 / 预定交付物：范围说明与需求覆盖矩阵 / 验收依据：AC-01～14 / 仿真负责人：R01 / 计划日期：2026-10-192026-10-19 / 工期：1工作日 / 分资源人时：R01=8；R02=4；R03=4；R04=4 / 前置关系： / 估算依据：已有SRS逐条确认43项需求、范围和验收映射，四人并行核对 / 不早于开始日期用于资源平衡，约束修改后重新核验每天8小时容量。 / 实际开始/完成、实际人时/成本、测试结果及接收凭据：留空。 / 估算方法：自下而上估算：按WBS活动分资源人时×仿真费率汇总；复杂度、复用条件和工作量假设逐轮复核。已有SRS逐条确认43项需求、范围和验收映射，四人并行核对 / 成本控制：AC与EV尚未实际发生时留空；按同一周末截止口径比较PV、AC与EV并分析原因。 / 质量与职责控制（CR-004）：逐项核对43项需求、WBS和AC；登记歧义及决定。 / 交叉复核：R04牵头按具体成果安排非作者复核；同为作者时在原分配内换人。 / 质量费用：预防活动（混合）；沿用原任务及资源费用，不重复加算。实际执行、问题及复测证据见Excel质量与变更登记区，未发生时留空。 / 仿真估算依据: 自下而上估算：按WBS活动分资源人时×仿真费率汇总；复杂度、复用条件和工作量假设逐轮复核。已有SRS逐条确认43项需求、范围和验收映射，四人并行核对
- 4: 暂时性实施规划：4人、8周模拟项目计划。 / 任务：T1.2 形成WBS与项目计划初稿 / 需求：项目管理 / 预定交付物：范围、进度、资源、成本、质量计划 / 验收依据：计划内部评审 / 仿真负责人：R01 / 计划日期：2026-10-202026-10-21 / 工期：2工作日 / 分资源人时：R01=8；R02=0；R03=0；R04=2 / 前置关系：T1.1FS+0工作日 / 估算依据：四项计划、WBS与预算编制，项目经理主导，QA复核2小时 / 不早于开始日期用于资源平衡，约束修改后重新核验每天8小时容量。 / 实际开始/完成、实际人时/成本、测试结果及接收凭据：留空。 / 估算方法：自下而上估算：按WBS活动分资源人时×仿真费率汇总；复杂度、复用条件和工作量假设逐轮复核。四项计划、WBS与预算编制，项目经理主导，QA复核2小时 / 成本控制：AC与EV尚未实际发生时留空；按同一周末截止口径比较PV、AC与EV并分析原因。 / 质量与职责控制（CR-004）：计划明确质量目标、活动、责任、证据及容量假设。 / 交叉复核：R04牵头按具体成果安排非作者复核；同为作者时在原分配内换人。 / 质量费用：计划/质量预防（混合）；沿用原任务及资源费用，不重复加算。实际执行、问题及复测证据见Excel质量与变更登记区，未发生时留空。 / 仿真估算依据: 自下而上估算：按WBS活动分资源人时×仿真费率汇总；复杂度、复用条件和工作量假设逐轮复核。四项计划、WBS与预算编制，项目经理主导，QA复核2小时
- 5: 暂时性实施规划：4人、8周模拟项目计划。 / 任务：T1.3 编写测试大纲与合成数据方案 / 需求：NFR-01～11, IF-01～04 / 预定交付物：测试大纲、验收数据与预期答案 / 验收依据：AC-01～14 / 仿真负责人：R04 / 计划日期：2026-10-202026-10-22 / 工期：3工作日 / 分资源人时：R01=2；R02=0；R03=0；R04=16 / 前置关系：T1.1FS+0工作日 / 估算依据：14组验收、边界数据、压力数据方案 / 不早于开始日期用于资源平衡，约束修改后重新核验每天8小时容量。 / 实际开始/完成、实际人时/成本、测试结果及接收凭据：留空。 / 估算方法：自下而上估算：按WBS活动分资源人时×仿真费率汇总；复杂度、复用条件和工作量假设逐轮复核。14组验收、边界数据、压力数据方案 / 成本控制：AC与EV尚未实际发生时留空；按同一周末截止口径比较PV、AC与EV并分析原因。 / 质量与职责控制（CR-004）：实现前评审测试大纲、数据、必需用例与证据规则。 / 交叉复核：R01牵头按具体成果安排非作者复核；同为作者时在原分配内换人。 / 质量费用：预防；沿用原任务及资源费用，不重复加算。实际执行、问题及复测证据见Excel质量与变更登记区，未发生时留空。 / 仿真估算依据: 自下而上估算：按WBS活动分资源人时×仿真费率汇总；复杂度、复用条件和工作量假设逐轮复核。14组验收、边界数据、压力数据方案
- 6: 暂时性实施规划；下属活动为计划，未登记实际完成。
- 7: 暂时性实施规划：4人、8周模拟项目计划。 / 任务：T2.1 总体架构与模块设计 / 需求：FR-01～28, IF-01～04 / 预定交付物：总体设计与模块接口说明 / 验收依据：设计评审 / 仿真负责人：R02 / 计划日期：2026-10-202026-10-21 / 工期：2工作日 / 分资源人时：R01=6；R02=12；R03=6；R04=2 / 前置关系：T1.1FS+0工作日 / 估算依据：分层架构、权限边界和状态流设计，QA参加2小时可测性评审 / 不早于开始日期用于资源平衡，约束修改后重新核验每天8小时容量。 / 实际开始/完成、实际人时/成本、测试结果及接收凭据：留空。 / 估算方法：自下而上估算：按WBS活动分资源人时×仿真费率汇总；复杂度、复用条件和工作量假设逐轮复核。分层架构、权限边界和状态流设计，QA参加2小时可测性评审 / 成本控制：AC与EV尚未实际发生时留空；按同一周末截止口径比较PV、AC与EV并分析原因。 / 质量与职责控制（CR-004）：设计、接口、状态、权限及性能前提交叉复核；版本/CR真实对应。 / 交叉复核：R04牵头按具体成果安排非作者复核；同为作者时在原分配内换人。 / 质量费用：设计/管理/预防（混合）；沿用原任务及资源费用，不重复加算。实际执行、问题及复测证据见Excel质量与变更登记区，未发生时留空。 / 仿真估算依据: 自下而上估算：按WBS活动分资源人时×仿真费率汇总；复杂度、复用条件和工作量假设逐轮复核。分层架构、权限边界和状态流设计，QA参加2小时可测性评审
- 8: 暂时性实施规划：4人、8周模拟项目计划。 / 任务：T2.2 数据模型、版本与事务设计 / 需求：FR-02～13, FR-21, FR-25～28, NFR-09 / 预定交付物：数据模型、迁移与快照审计设计 / 验收依据：AC-01～04, AC-09 / 仿真负责人：R02 / 计划日期：2026-10-222026-10-23 / 工期：2工作日 / 分资源人时：R01=4；R02=12；R03=0；R04=0 / 前置关系：T2.1FS+0工作日 / 估算依据：版本、事务、冻结快照和审计模型设计 / 不早于开始日期用于资源平衡，约束修改后重新核验每天8小时容量。 / 实际开始/完成、实际人时/成本、测试结果及接收凭据：留空。 / 估算方法：自下而上估算：按WBS活动分资源人时×仿真费率汇总；复杂度、复用条件和工作量假设逐轮复核。版本、事务、冻结快照和审计模型设计 / 成本控制：AC与EV尚未实际发生时留空；按同一周末截止口径比较PV、AC与EV并分析原因。 / 质量与职责控制（CR-004）：设计、接口、状态、权限及性能前提交叉复核；版本/CR真实对应。 / 交叉复核：R01牵头按具体成果安排非作者复核；同为作者时在原分配内换人。 / 质量费用：设计/管理/预防（混合）；沿用原任务及资源费用，不重复加算。实际执行、问题及复测证据见Excel质量与变更登记区，未发生时留空。 / 仿真估算依据: 自下而上估算：按WBS活动分资源人时×仿真费率汇总；复杂度、复用条件和工作量假设逐轮复核。版本、事务、冻结快照和审计模型设计
- 9: 暂时性实施规划：4人、8周模拟项目计划。 / 任务：T2.3 内部接口与导出契约设计 / 需求：IF-01～04 / 预定交付物：内部API、导出、监控和MOCK契约 / 验收依据：AC-06, AC-10A, AC-14 / 仿真负责人：R01 / 计划日期：2026-10-222026-10-23 / 工期：2工作日 / 分资源人时：R01=6；R02=2；R03=4；R04=4 / 前置关系：T2.1FS+0工作日 / 估算依据：已有SRS契约细化、错误码及导出接口设计 / 不早于开始日期用于资源平衡，约束修改后重新核验每天8小时容量。 / 实际开始/完成、实际人时/成本、测试结果及接收凭据：留空。 / 估算方法：自下而上估算：按WBS活动分资源人时×仿真费率汇总；复杂度、复用条件和工作量假设逐轮复核。已有SRS契约细化、错误码及导出接口设计 / 成本控制：AC与EV尚未实际发生时留空；按同一周末截止口径比较PV、AC与EV并分析原因。 / 质量与职责控制（CR-004）：设计、接口、状态、权限及性能前提交叉复核；版本/CR真实对应。 / 交叉复核：R04牵头按具体成果安排非作者复核；同为作者时在原分配内换人。 / 质量费用：设计/管理/预防（混合）；沿用原任务及资源费用，不重复加算。实际执行、问题及复测证据见Excel质量与变更登记区，未发生时留空。 / 仿真估算依据: 自下而上估算：按WBS活动分资源人时×仿真费率汇总；复杂度、复用条件和工作量假设逐轮复核。已有SRS契约细化、错误码及导出接口设计
- 10: 暂时性实施规划：4人、8周模拟项目计划。 / 任务：T2.4 确认国家真实交换输入 / 需求：FR-26, IF-01 / 预定交付物：协议版本、端点用途、认证与字段编码映射 / 验收依据：AC-10B / 仿真负责人：R01 / 计划日期：2026-10-262026-10-28 / 工期：3工作日 / 分资源人时：R01=6；R02=4；R03=0；R04=0 / 前置关系：T1.1FS+0工作日 / 估算依据：仿真假设W2具备协议、端点、测试凭据和字段映射 / 不早于开始日期用于资源平衡，约束修改后重新核验每天8小时容量。 / 实际开始/完成、实际人时/成本、测试结果及接收凭据：留空。 / 估算方法：自下而上估算：按WBS活动分资源人时×仿真费率汇总；复杂度、复用条件和工作量假设逐轮复核。外部协议和验证条件未确认；不预置未经证实的模型参数。仿真假设W2具备协议、端点、测试凭据和字段映射 / 成本控制：AC与EV尚未实际发生时留空；按同一周末截止口径比较PV、AC与EV并分析原因。 / 质量与职责控制（CR-004）：设计、接口、状态、权限及性能前提交叉复核；版本/CR真实对应。 / 交叉复核：R02牵头按具体成果安排非作者复核；同为作者时在原分配内换人。 / 质量费用：设计/管理/预防（混合）；沿用原任务及资源费用，不重复加算。实际执行、问题及复测证据见Excel质量与变更登记区，未发生时留空。 / 仿真估算依据: 自下而上估算：按WBS活动分资源人时×仿真费率汇总；复杂度、复用条件和工作量假设逐轮复核。外部协议和验证条件未确认；不预置未经证实的模型参数。仿真假设W2具备协议、端点、测试凭据和字段映射
- 11: 暂时性实施规划：4人、8周模拟项目计划。 / 任务：T2.5 维护计划与配置版本 / 需求：项目管理 / 预定交付物：计划修订记录、配置和文档版本 / 验收依据：版本复核 / 仿真负责人：R01 / 计划日期：2026-10-222026-12-10 / 工期：36工作日 / 分资源人时：R01=36；R02=0；R03=0；R04=0 / 前置关系：T1.2FS+0工作日 / 估算依据：D4D39每日1小时配置、计划、风险和成本跟踪 / 不早于开始日期用于资源平衡，约束修改后重新核验每天8小时容量。 / 实际开始/完成、实际人时/成本、测试结果及接收凭据：留空。 / 估算方法：自下而上估算：按WBS活动分资源人时×仿真费率汇总；复杂度、复用条件和工作量假设逐轮复核。D4D39每日1小时配置、计划、风险和成本跟踪 / 成本控制：AC与EV尚未实际发生时留空；按同一周末截止口径比较PV、AC与EV并分析原因。 / 在既有维护工时内开展W1W8周复核、估算细化、风险及偏差分析和版本证据归档；无基线变化时记录复核结论，不制造修订。 / 质量与职责控制（CR-004）：设计、接口、状态、权限及性能前提交叉复核；版本/CR真实对应。 / 交叉复核：R01日常登记；R04在T1.2/T4.1/T5.7原评审投入内抽查。 / 质量费用：设计/管理/预防（混合）；沿用原任务及资源费用，不重复加算。实际执行、问题及复测证据见Excel质量与变更登记区，未发生时留空。 / 仿真估算依据: 自下而上估算：按WBS活动分资源人时×仿真费率汇总；复杂度、复用条件和工作量假设逐轮复核。D4–D39每日1小时配置、计划、风险和成本跟踪
- 12: 暂时性实施规划；下属活动为计划，未登记实际完成。
- 13: 暂时性实施规划：4人、8周模拟项目计划。 / 任务：T3.1 建立开发与本地集成环境 / 需求：NFR-11 / 预定交付物：项目骨架、锁定依赖与启动说明 / 验收依据：AC-14 / 仿真负责人：R04 / 计划日期：2026-10-232026-10-26 / 工期：2工作日 / 分资源人时：R01=0；R02=0；R03=4；R04=12 / 前置关系：T2.1FS+0工作日 / 估算依据：复用通用脚手架，配置本地环境与依赖 / 不早于开始日期用于资源平衡，约束修改后重新核验每天8小时容量。 / 实际开始/完成、实际人时/成本、测试结果及接收凭据：留空。 / 估算方法：自下而上估算：按WBS活动分资源人时×仿真费率汇总；复杂度、复用条件和工作量假设逐轮复核。复用通用脚手架，配置本地环境与依赖 / 成本控制：AC与EV尚未实际发生时留空；按同一周末截止口径比较PV、AC与EV并分析原因。 / 质量与职责控制（CR-004）：小批量提交与集成；非作者复核代码/配置并验证相关失败及边界场景。 / 交叉复核：R03牵头按具体成果安排非作者复核；同为作者时在原分配内换人。 / 质量费用：开发/预防（混合）；沿用原任务及资源费用，不重复加算。实际执行、问题及复测证据见Excel质量与变更登记区，未发生时留空。 / 仿真估算依据: 自下而上估算：按WBS活动分资源人时×仿真费率汇总；复杂度、复用条件和工作量假设逐轮复核。复用通用脚手架，配置本地环境与依赖
- 14: 暂时性实施规划：4人、8周模拟项目计划。 / 任务：T3.2 实现认证、权限和角色基础 / 需求：FR-01, FR-22, FR-23, NFR-06～08, IF-02 / 预定交付物：会话、范围鉴权、TOTP与角色管理 / 验收依据：AC-05, AC-08, AC-13 / 仿真负责人：R01 / 计划日期：2026-10-272026-10-29 / 工期：3工作日 / 分资源人时：R01=9.0；R02=3.0；R03=4.0；R04=2.0 / 前置关系：T2.3FS+0工作日; T3.1FS+0工作日 / 估算依据：认证、范围鉴权与TOTP复用成熟库，人工复核；仿真假设成熟组件和自动化工具辅助使开发工作量为独立手写初估的50%，仍保留人工复核，非已完成代码复用 / 不早于开始日期用于资源平衡，约束修改后重新核验每天8小时容量。 / 实际开始/完成、实际人时/成本、测试结果及接收凭据：留空。 / 估算方法：自下而上估算：按WBS活动分资源人时×仿真费率汇总；复杂度、复用条件和工作量假设逐轮复核。认证、范围鉴权与TOTP复用成熟库，人工复核；仿真假设成熟组件和自动化工具辅助使开发工作量为独立手写初估的50%，仍保留人工复核，非已完成代码复用 / 成本控制：AC与EV尚未实际发生时留空；按同一周末截止口径比较PV、AC与EV并分析原因。 / 质量与职责控制（CR-004）：小批量提交与集成；非作者复核代码/配置并验证相关失败及边界场景。 / 交叉复核：R04牵头按具体成果安排非作者复核；同为作者时在原分配内换人。 / 质量费用：开发/预防（混合）；沿用原任务及资源费用，不重复加算。实际执行、问题及复测证据见Excel质量与变更登记区，未发生时留空。 / 仿真估算依据: 自下而上估算：按WBS活动分资源人时×仿真费率汇总；复杂度、复用条件和工作量假设逐轮复核。认证、范围鉴权与TOTP复用成熟库，人工复核；仿真假设成熟组件和自动化工具辅助使开发工作量为独立手写初估的50%，仍保留人工复核，非已完成代码复用
- 15: 暂时性实施规划：4人、8周模拟项目计划。 / 任务：T3.3 实现字典、地区和基准管理 / 需求：FR-28 / 预定交付物：字典地区种子与基准版本功能 / 验收依据：AC-01, AC-03 / 仿真负责人：R02 / 计划日期：2026-10-272026-10-28 / 工期：2工作日 / 分资源人时：R01=0.0；R02=6.0；R03=3.0；R04=0.0 / 前置关系：T2.2FS+0工作日; T3.1FS+0工作日 / 估算依据：字典及地区种子、基准版本维护；仿真假设成熟组件和自动化工具辅助使开发工作量为独立手写初估的50%，仍保留人工复核，非已完成代码复用 / 不早于开始日期用于资源平衡，约束修改后重新核验每天8小时容量。 / 实际开始/完成、实际人时/成本、测试结果及接收凭据：留空。 / 估算方法：自下而上估算：按WBS活动分资源人时×仿真费率汇总；复杂度、复用条件和工作量假设逐轮复核。字典及地区种子、基准版本维护；仿真假设成熟组件和自动化工具辅助使开发工作量为独立手写初估的50%，仍保留人工复核，非已完成代码复用 / 成本控制：AC与EV尚未实际发生时留空；按同一周末截止口径比较PV、AC与EV并分析原因。 / 质量与职责控制（CR-004）：小批量提交与集成；非作者复核代码/配置并验证相关失败及边界场景。 / 交叉复核：R03牵头按具体成果安排非作者复核；同为作者时在原分配内换人。 / 质量费用：开发/预防（混合）；沿用原任务及资源费用，不重复加算。实际执行、问题及复测证据见Excel质量与变更登记区，未发生时留空。 / 仿真估算依据: 自下而上估算：按WBS活动分资源人时×仿真费率汇总；复杂度、复用条件和工作量假设逐轮复核。字典及地区种子、基准版本维护；仿真假设成熟组件和自动化工具辅助使开发工作量为独立手写初估的50%，仍保留人工复核，非已完成代码复用
- 16: 暂时性实施规划：4人、8周模拟项目计划。 / 任务：T3.4 实现企业资料与备案审批 / 需求：FR-02, FR-03, FR-09 / 预定交付物：资料草稿、变更备案与版本查询 / 验收依据：AC-01, AC-06 / 仿真负责人：R02 / 计划日期：2026-10-302026-11-03 / 工期：3工作日 / 分资源人时：R01=6.0；R02=9.0；R03=9.0；R04=2.0 / 前置关系：T3.2FS+0工作日; T3.3FS+0工作日 / 估算依据：资料备案状态链、变更版本和审批界面；仿真假设成熟组件和自动化工具辅助使开发工作量为独立手写初估的50%，仍保留人工复核，非已完成代码复用 / 不早于开始日期用于资源平衡，约束修改后重新核验每天8小时容量。 / 实际开始/完成、实际人时/成本、测试结果及接收凭据：留空。 / 估算方法：自下而上估算：按WBS活动分资源人时×仿真费率汇总；复杂度、复用条件和工作量假设逐轮复核。资料备案状态链、变更版本和审批界面；仿真假设成熟组件和自动化工具辅助使开发工作量为独立手写初估的50%，仍保留人工复核，非已完成代码复用 / 成本控制：AC与EV尚未实际发生时留空；按同一周末截止口径比较PV、AC与EV并分析原因。 / 质量与职责控制（CR-004）：小批量提交与集成；非作者复核代码/配置并验证相关失败及边界场景。 / 交叉复核：R04牵头按具体成果安排非作者复核；同为作者时在原分配内换人。 / 质量费用：开发/预防（混合）；沿用原任务及资源费用，不重复加算。实际执行、问题及复测证据见Excel质量与变更登记区，未发生时留空。 / 仿真估算依据: 自下而上估算：按WBS活动分资源人时×仿真费率汇总；复杂度、复用条件和工作量假设逐轮复核。资料备案状态链、变更版本和审批界面；仿真假设成熟组件和自动化工具辅助使开发工作量为独立手写初估的50%，仍保留人工复核，非已完成代码复用
- 17: 暂时性实施规划：4人、8周模拟项目计划。 / 任务：T3.5 实现月报草稿、校验与提交 / 需求：FR-04, FR-05, NFR-09, IF-02 / 预定交付物：月报、幂等提交与冻结快照 / 验收依据：AC-02 / 仿真负责人：R02 / 计划日期：2026-11-032026-11-05 / 工期：3工作日 / 分资源人时：R01=7.0；R02=9.0；R03=9.0；R04=2.0 / 前置关系：T3.4SS+1工作日; T3.7FS+0工作日 / 估算依据：月报校验、幂等提交、版本与冻结快照；仿真假设成熟组件和自动化工具辅助使开发工作量为独立手写初估的50%，仍保留人工复核，非已完成代码复用；已确认SRS接口后先交付内部接口骨架，模块重叠编码；集成和验收等待全部相关模块完成 / 不早于开始日期用于资源平衡，约束修改后重新核验每天8小时容量。 / 实际开始/完成、实际人时/成本、测试结果及接收凭据：留空。 / 估算方法：自下而上估算：按WBS活动分资源人时×仿真费率汇总；复杂度、复用条件和工作量假设逐轮复核。月报校验、幂等提交、版本与冻结快照；仿真假设成熟组件和自动化工具辅助使开发工作量为独立手写初估的50%，仍保留人工复核，非已完成代码复用；已确认SRS接口后先交付内部接口骨架，模块重叠编码；集成和验收等待全部相关模块完成 / 成本控制：AC与EV尚未实际发生时留空；按同一周末截止口径比较PV、AC与EV并分析原因。 / 质量与职责控制（CR-004）：小批量提交与集成；非作者复核代码/配置并验证相关失败及边界场景。 / 交叉复核：R04牵头按具体成果安排非作者复核；同为作者时在原分配内换人。 / 质量费用：开发/预防（混合）；沿用原任务及资源费用，不重复加算。实际执行、问题及复测证据见Excel质量与变更登记区，未发生时留空。 / 仿真估算依据: 自下而上估算：按WBS活动分资源人时×仿真费率汇总；复杂度、复用条件和工作量假设逐轮复核。月报校验、幂等提交、版本与冻结快照；仿真假设成熟组件和自动化工具辅助使开发工作量为独立手写初估的50%，仍保留人工复核，非已完成代码复用；已确认SRS接口后先交付内部接口骨架，模块重叠编码；集成和验收等待全部相关模块完成
- 18: 暂时性实施规划：4人、8周模拟项目计划。 / 任务：T3.6 实现市省审核与退回重提 / 需求：FR-07, FR-08, FR-10, FR-11 / 预定交付物：审核状态链、退回重提与审计 / 验收依据：AC-03, AC-05 / 仿真负责人：R02 / 计划日期：2026-11-042026-11-05 / 工期：2工作日 / 分资源人时：R01=5.0；R02=6.0；R03=6.0；R04=2.0 / 前置关系：T3.5SS+1工作日 / 估算依据：市省审核、退回与补报状态转换；仿真假设成熟组件和自动化工具辅助使开发工作量为独立手写初估的50%，仍保留人工复核，非已完成代码复用；已确认SRS接口后先交付内部接口骨架，模块重叠编码；集成和验收等待全部相关模块完成 / 不早于开始日期用于资源平衡，约束修改后重新核验每天8小时容量。 / 实际开始/完成、实际人时/成本、测试结果及接收凭据：留空。 / 估算方法：自下而上估算：按WBS活动分资源人时×仿真费率汇总；复杂度、复用条件和工作量假设逐轮复核。市省审核、退回与补报状态转换；仿真假设成熟组件和自动化工具辅助使开发工作量为独立手写初估的50%，仍保留人工复核，非已完成代码复用；已确认SRS接口后先交付内部接口骨架，模块重叠编码；集成和验收等待全部相关模块完成 / 成本控制：AC与EV尚未实际发生时留空；按同一周末截止口径比较PV、AC与EV并分析原因。 / 质量与职责控制（CR-004）：小批量提交与集成；非作者复核代码/配置并验证相关失败及边界场景。 / 交叉复核：R04牵头按具体成果安排非作者复核；同为作者时在原分配内换人。 / 质量费用：开发/预防（混合）；沿用原任务及资源费用，不重复加算。实际执行、问题及复测证据见Excel质量与变更登记区，未发生时留空。 / 仿真估算依据: 自下而上估算：按WBS活动分资源人时×仿真费率汇总；复杂度、复用条件和工作量假设逐轮复核。市省审核、退回与补报状态转换；仿真假设成熟组件和自动化工具辅助使开发工作量为独立手写初估的50%，仍保留人工复核，非已完成代码复用；已确认SRS接口后先交付内部接口骨架，模块重叠编码；集成和验收等待全部相关模块完成
- 19: 暂时性实施规划：4人、8周模拟项目计划。 / 任务：T3.7 实现调查期与补报授权 / 需求：FR-21, FR-11 / 预定交付物：调查期配置与补报窗口控制 / 验收依据：AC-02, AC-03 / 仿真负责人：R01 / 计划日期：2026-10-302026-11-02 / 工期：2工作日 / 分资源人时：R01=5.0；R02=5.0；R03=3.0；R04=1.0 / 前置关系：T3.2FS+0工作日; T3.3FS+0工作日 / 估算依据：调查期、补报窗口及权限，复用状态基础；仿真假设成熟组件和自动化工具辅助使开发工作量为独立手写初估的50%，仍保留人工复核，非已完成代码复用 / 不早于开始日期用于资源平衡，约束修改后重新核验每天8小时容量。 / 实际开始/完成、实际人时/成本、测试结果及接收凭据：留空。 / 估算方法：自下而上估算：按WBS活动分资源人时×仿真费率汇总；复杂度、复用条件和工作量假设逐轮复核。调查期、补报窗口及权限，复用状态基础；仿真假设成熟组件和自动化工具辅助使开发工作量为独立手写初估的50%，仍保留人工复核，非已完成代码复用 / 成本控制：AC与EV尚未实际发生时留空；按同一周末截止口径比较PV、AC与EV并分析原因。 / 质量与职责控制（CR-004）：小批量提交与集成；非作者复核代码/配置并验证相关失败及边界场景。 / 交叉复核：R04牵头按具体成果安排非作者复核；同为作者时在原分配内换人。 / 质量费用：开发/预防（混合）；沿用原任务及资源费用，不重复加算。实际执行、问题及复测证据见Excel质量与变更登记区，未发生时留空。 / 仿真估算依据: 自下而上估算：按WBS活动分资源人时×仿真费率汇总；复杂度、复用条件和工作量假设逐轮复核。调查期、补报窗口及权限，复用状态基础；仿真假设成熟组件和自动化工具辅助使开发工作量为独立手写初估的50%，仍保留人工复核，非已完成代码复用
- 20: 暂时性实施规划：4人、8周模拟项目计划。 / 任务：T3.8 实现独立修订与撤销链 / 需求：FR-12, FR-27, NFR-09 / 预定交付物：修订另存、生效、撤销与日志 / 验收依据：AC-04, AC-09 / 仿真负责人：R01 / 计划日期：2026-11-062026-11-10 / 工期：3工作日 / 分资源人时：R01=9.0；R02=9.0；R03=6.0；R04=3.0 / 前置关系：T3.6SS+1工作日; T2.2FS+0工作日 / 估算依据：独立修订、生效与撤销事务、审计一致性；仿真假设成熟组件和自动化工具辅助使开发工作量为独立手写初估的50%，仍保留人工复核，非已完成代码复用；已确认SRS接口后先交付内部接口骨架，模块重叠编码；集成和验收等待全部相关模块完成 / 不早于开始日期用于资源平衡，约束修改后重新核验每天8小时容量。 / 实际开始/完成、实际人时/成本、测试结果及接收凭据：留空。 / 估算方法：自下而上估算：按WBS活动分资源人时×仿真费率汇总；复杂度、复用条件和工作量假设逐轮复核。独立修订、生效与撤销事务、审计一致性；仿真假设成熟组件和自动化工具辅助使开发工作量为独立手写初估的50%，仍保留人工复核，非已完成代码复用；已确认SRS接口后先交付内部接口骨架，模块重叠编码；集成和验收等待全部相关模块完成 / 成本控制：AC与EV尚未实际发生时留空；按同一周末截止口径比较PV、AC与EV并分析原因。 / 质量与职责控制（CR-004）：小批量提交与集成；非作者复核代码/配置并验证相关失败及边界场景。 / 交叉复核：R04牵头按具体成果安排非作者复核；同为作者时在原分配内换人。 / 质量费用：开发/预防（混合）；沿用原任务及资源费用，不重复加算。实际执行、问题及复测证据见Excel质量与变更登记区，未发生时留空。 / 仿真估算依据: 自下而上估算：按WBS活动分资源人时×仿真费率汇总；复杂度、复用条件和工作量假设逐轮复核。独立修订、生效与撤销事务、审计一致性；仿真假设成熟组件和自动化工具辅助使开发工作量为独立手写初估的50%，仍保留人工复核，非已完成代码复用；已确认SRS接口后先交付内部接口骨架，模块重叠编码；集成和验收等待全部相关模块完成
- 21: 暂时性实施规划：4人、8周模拟项目计划。 / 任务：T3.9 实现历史浏览和快照查询 / 需求：FR-06, FR-09 / 预定交付物：历史版本与正式提交标记查询 / 验收依据：AC-01, AC-05, AC-06 / 仿真负责人：R03 / 计划日期：2026-11-062026-11-09 / 工期：2工作日 / 分资源人时：R01=2.0；R02=4.0；R03=6.0；R04=2.0 / 前置关系：T3.4FS+0工作日; T3.5SS+1工作日 / 估算依据：历史查询和快照显示复用资料模块；仿真假设成熟组件和自动化工具辅助使开发工作量为独立手写初估的50%，仍保留人工复核，非已完成代码复用；已确认SRS接口后先交付内部接口骨架，模块重叠编码；集成和验收等待全部相关模块完成 / 不早于开始日期用于资源平衡，约束修改后重新核验每天8小时容量。 / 实际开始/完成、实际人时/成本、测试结果及接收凭据：留空。 / 估算方法：自下而上估算：按WBS活动分资源人时×仿真费率汇总；复杂度、复用条件和工作量假设逐轮复核。历史查询和快照显示复用资料模块；仿真假设成熟组件和自动化工具辅助使开发工作量为独立手写初估的50%，仍保留人工复核，非已完成代码复用；已确认SRS接口后先交付内部接口骨架，模块重叠编码；集成和验收等待全部相关模块完成 / 成本控制：AC与EV尚未实际发生时留空；按同一周末截止口径比较PV、AC与EV并分析原因。 / 质量与职责控制（CR-004）：小批量提交与集成；非作者复核代码/配置并验证相关失败及边界场景。 / 交叉复核：R04牵头按具体成果安排非作者复核；同为作者时在原分配内换人。 / 质量费用：开发/预防（混合）；沿用原任务及资源费用，不重复加算。实际执行、问题及复测证据见Excel质量与变更登记区，未发生时留空。 / 仿真估算依据: 自下而上估算：按WBS活动分资源人时×仿真费率汇总；复杂度、复用条件和工作量假设逐轮复核。历史查询和快照显示复用资料模块；仿真假设成熟组件和自动化工具辅助使开发工作量为独立手写初估的50%，仍保留人工复核，非已完成代码复用；已确认SRS接口后先交付内部接口骨架，模块重叠编码；集成和验收等待全部相关模块完成
- 22: 暂时性实施规划：4人、8周模拟项目计划。 / 任务：T3.10 实现汇总指标与统计口径 / 需求：FR-13 / 预定交付物：原始/修订口径汇总与公式复算 / 验收依据：AC-04, AC-07 / 仿真负责人：R02 / 计划日期：2026-11-102026-11-11 / 工期：2工作日 / 分资源人时：R01=4.0；R02=6.0；R03=4.0；R04=2.0 / 前置关系：T3.8SS+1工作日 / 估算依据：六指标、原始/修订口径及零分母规则；仿真假设成熟组件和自动化工具辅助使开发工作量为独立手写初估的50%，仍保留人工复核，非已完成代码复用；已确认SRS接口后先交付内部接口骨架，模块重叠编码；集成和验收等待全部相关模块完成 / 不早于开始日期用于资源平衡，约束修改后重新核验每天8小时容量。 / 实际开始/完成、实际人时/成本、测试结果及接收凭据：留空。 / 估算方法：自下而上估算：按WBS活动分资源人时×仿真费率汇总；复杂度、复用条件和工作量假设逐轮复核。六指标、原始/修订口径及零分母规则；仿真假设成熟组件和自动化工具辅助使开发工作量为独立手写初估的50%，仍保留人工复核，非已完成代码复用；已确认SRS接口后先交付内部接口骨架，模块重叠编码；集成和验收等待全部相关模块完成 / 成本控制：AC与EV尚未实际发生时留空；按同一周末截止口径比较PV、AC与EV并分析原因。 / 质量与职责控制（CR-004）：小批量提交与集成；非作者复核代码/配置并验证相关失败及边界场景。 / 交叉复核：R04牵头按具体成果安排非作者复核；同为作者时在原分配内换人。 / 质量费用：开发/预防（混合）；沿用原任务及资源费用，不重复加算。实际执行、问题及复测证据见Excel质量与变更登记区，未发生时留空。 / 仿真估算依据: 自下而上估算：按WBS活动分资源人时×仿真费率汇总；复杂度、复用条件和工作量假设逐轮复核。六指标、原始/修订口径及零分母规则；仿真假设成熟组件和自动化工具辅助使开发工作量为独立手写初估的50%，仍保留人工复核，非已完成代码复用；已确认SRS接口后先交付内部接口骨架，模块重叠编码；集成和验收等待全部相关模块完成
- 23: 暂时性实施规划：4人、8周模拟项目计划。 / 任务：T3.11 实现条件查询与XLSX导出 / 需求：FR-14, FR-15, IF-03 / 预定交付物：13条件查询、异步导出与鉴权下载 / 验收依据：AC-06, AC-09 / 仿真负责人：R03 / 计划日期：2026-11-092026-11-11 / 工期：3工作日 / 分资源人时：R01=0.0；R02=6.0；R03=9.0；R04=6.0 / 前置关系：T3.9SS+1工作日; T2.3FS+0工作日 / 估算依据：13条件查询、异步导出与安全鉴权；按模块专长重新分工，测试部署成员兼工具及自动化开发；仿真假设成熟组件和自动化工具辅助使开发工作量为独立手写初估的50%，仍保留人工复核，非已完成代码复用；已确认SRS接口后先交付内部接口骨架，模块重叠编码；集成和验收等待全部相关模块完成 / 不早于开始日期用于资源平衡，约束修改后重新核验每天8小时容量。 / 实际开始/完成、实际人时/成本、测试结果及接收凭据：留空。 / 估算方法：自下而上估算：按WBS活动分资源人时×仿真费率汇总；复杂度、复用条件和工作量假设逐轮复核。13条件查询、异步导出与安全鉴权；按模块专长重新分工，测试部署成员兼工具及自动化开发；仿真假设成熟组件和自动化工具辅助使开发工作量为独立手写初估的50%，仍保留人工复核，非已完成代码复用；已确认SRS接口后先交付内部接口骨架，模块重叠编码；集成和验收等待全部相关模块完成 / 成本控制：AC与EV尚未实际发生时留空；按同一周末截止口径比较PV、AC与EV并分析原因。 / 质量与职责控制（CR-004）：小批量提交与集成；非作者复核代码/配置并验证相关失败及边界场景。 / 交叉复核：R04牵头按具体成果安排非作者复核；同为作者时在原分配内换人。 / 质量费用：开发/预防（混合）；沿用原任务及资源费用，不重复加算。实际执行、问题及复测证据见Excel质量与变更登记区，未发生时留空。 / 仿真估算依据: 自下而上估算：按WBS活动分资源人时×仿真费率汇总；复杂度、复用条件和工作量假设逐轮复核。13条件查询、异步导出与安全鉴权；按模块专长重新分工，测试部署成员兼工具及自动化开发；仿真假设成熟组件和自动化工具辅助使开发工作量为独立手写初估的50%，仍保留人工复核，非已完成代码复用；已确认SRS接口后先交付内部接口骨架，模块重叠编码；集成和验收等待全部相关模块完成
- 24: 暂时性实施规划：4人、8周模拟项目计划。 / 任务：T3.12 实现各市取样与地区筛选 / 需求：FR-16 / 预定交付物：备案/有效上报取样与同源图表 / 验收依据：AC-07 / 仿真负责人：R03 / 计划日期：2026-11-182026-11-19 / 工期：2工作日 / 分资源人时：R01=0.0；R02=3.0；R03=6.0；R04=6.0 / 前置关系：T3.4FS+0工作日; T3.3FS+0工作日 / 估算依据：取样、地区过滤和同源图表复用查询；按模块专长重新分工，测试部署成员兼工具及自动化开发；仿真假设成熟组件和自动化工具辅助使开发工作量为独立手写初估的50%，仍保留人工复核，非已完成代码复用 / 不早于开始日期用于资源平衡，约束修改后重新核验每天8小时容量。 / 实际开始/完成、实际人时/成本、测试结果及接收凭据：留空。 / 估算方法：自下而上估算：按WBS活动分资源人时×仿真费率汇总；复杂度、复用条件和工作量假设逐轮复核。取样、地区过滤和同源图表复用查询；按模块专长重新分工，测试部署成员兼工具及自动化开发；仿真假设成熟组件和自动化工具辅助使开发工作量为独立手写初估的50%，仍保留人工复核，非已完成代码复用 / 成本控制：AC与EV尚未实际发生时留空；按同一周末截止口径比较PV、AC与EV并分析原因。 / 质量与职责控制（CR-004）：小批量提交与集成；非作者复核代码/配置并验证相关失败及边界场景。 / 交叉复核：R04牵头按具体成果安排非作者复核；同为作者时在原分配内换人。 / 质量费用：开发/预防（混合）；沿用原任务及资源费用，不重复加算。实际执行、问题及复测证据见Excel质量与变更登记区，未发生时留空。 / 仿真估算依据: 自下而上估算：按WBS活动分资源人时×仿真费率汇总；复杂度、复用条件和工作量假设逐轮复核。取样、地区过滤和同源图表复用查询；按模块专长重新分工，测试部署成员兼工具及自动化开发；仿真假设成熟组件和自动化工具辅助使开发工作量为独立手写初估的50%，仍保留人工复核，非已完成代码复用
- 25: 暂时性实施规划：4人、8周模拟项目计划。 / 任务：T3.13 实现两期比较与连续期趋势 / 需求：FR-17, FR-18 / 预定交付物：样本比较、趋势和缺失语义 / 验收依据：AC-07 / 仿真负责人：R01 / 计划日期：2026-11-172026-11-19 / 工期：3工作日 / 分资源人时：R01=10.0；R02=0.0；R03=9.0；R04=2.0 / 前置关系：T3.10SS+1工作日 / 估算依据：两期、连续期趋势与缺样本语义；按模块专长重新分工，测试部署成员兼工具及自动化开发；仿真假设成熟组件和自动化工具辅助使开发工作量为独立手写初估的50%，仍保留人工复核，非已完成代码复用；已确认SRS接口后先交付内部接口骨架，模块重叠编码；集成和验收等待全部相关模块完成 / 不早于开始日期用于资源平衡，约束修改后重新核验每天8小时容量。 / 实际开始/完成、实际人时/成本、测试结果及接收凭据：留空。 / 估算方法：自下而上估算：按WBS活动分资源人时×仿真费率汇总；复杂度、复用条件和工作量假设逐轮复核。两期、连续期趋势与缺样本语义；按模块专长重新分工，测试部署成员兼工具及自动化开发；仿真假设成熟组件和自动化工具辅助使开发工作量为独立手写初估的50%，仍保留人工复核，非已完成代码复用；已确认SRS接口后先交付内部接口骨架，模块重叠编码；集成和验收等待全部相关模块完成 / 成本控制：AC与EV尚未实际发生时留空；按同一周末截止口径比较PV、AC与EV并分析原因。 / 质量与职责控制（CR-004）：小批量提交与集成；非作者复核代码/配置并验证相关失败及边界场景。 / 交叉复核：R04牵头按具体成果安排非作者复核；同为作者时在原分配内换人。 / 质量费用：开发/预防（混合）；沿用原任务及资源费用，不重复加算。实际执行、问题及复测证据见Excel质量与变更登记区，未发生时留空。 / 仿真估算依据: 自下而上估算：按WBS活动分资源人时×仿真费率汇总；复杂度、复用条件和工作量假设逐轮复核。两期、连续期趋势与缺样本语义；按模块专长重新分工，测试部署成员兼工具及自动化开发；仿真假设成熟组件和自动化工具辅助使开发工作量为独立手写初估的50%，仍保留人工复核，非已完成代码复用；已确认SRS接口后先交付内部接口骨架，模块重叠编码；集成和验收等待全部相关模块完成
- 26: 暂时性实施规划：4人、8周模拟项目计划。 / 任务：T3.14 实现通知与用户管理界面 / 需求：FR-19, FR-20, FR-22, FR-23 / 预定交付物：通知可见范围与用户角色管理 / 验收依据：AC-08, AC-05 / 仿真负责人：R03 / 计划日期：2026-11-162026-11-17 / 工期：2工作日 / 分资源人时：R01=0.0；R02=2.0；R03=9.0；R04=5.0 / 前置关系：T3.2FS+0工作日 / 估算依据：通知和账号管理界面复用权限基础；按模块专长重新分工，测试部署成员兼工具及自动化开发；仿真假设成熟组件和自动化工具辅助使开发工作量为独立手写初估的50%，仍保留人工复核，非已完成代码复用 / 不早于开始日期用于资源平衡，约束修改后重新核验每天8小时容量。 / 实际开始/完成、实际人时/成本、测试结果及接收凭据：留空。 / 估算方法：自下而上估算：按WBS活动分资源人时×仿真费率汇总；复杂度、复用条件和工作量假设逐轮复核。通知和账号管理界面复用权限基础；按模块专长重新分工，测试部署成员兼工具及自动化开发；仿真假设成熟组件和自动化工具辅助使开发工作量为独立手写初估的50%，仍保留人工复核，非已完成代码复用 / 成本控制：AC与EV尚未实际发生时留空；按同一周末截止口径比较PV、AC与EV并分析原因。 / 质量与职责控制（CR-004）：小批量提交与集成；非作者复核代码/配置并验证相关失败及边界场景。 / 交叉复核：R04牵头按具体成果安排非作者复核；同为作者时在原分配内换人。 / 质量费用：开发/预防（混合）；沿用原任务及资源费用，不重复加算。实际执行、问题及复测证据见Excel质量与变更登记区，未发生时留空。 / 仿真估算依据: 自下而上估算：按WBS活动分资源人时×仿真费率汇总；复杂度、复用条件和工作量假设逐轮复核。通知和账号管理界面复用权限基础；按模块专长重新分工，测试部署成员兼工具及自动化开发；仿真假设成熟组件和自动化工具辅助使开发工作量为独立手写初估的50%，仍保留人工复核，非已完成代码复用
- 27: 暂时性实施规划：4人、8周模拟项目计划。 / 任务：T3.15 实现删除恢复、脱敏与审计 / 需求：FR-25, FR-27, NFR-09 / 预定交付物：删除恢复、保留计时与事件链 / 验收依据：AC-09, AC-13 / 仿真负责人：R02 / 计划日期：2026-11-112026-11-13 / 工期：3工作日 / 分资源人时：R01=3.0；R02=8.0；R03=5.0；R04=7.0 / 前置关系：T3.8FS+0工作日 / 估算依据：删除恢复、清理计时、脱敏与审计链；按模块专长重新分工，测试部署成员兼工具及自动化开发；仿真假设成熟组件和自动化工具辅助使开发工作量为独立手写初估的50%，仍保留人工复核，非已完成代码复用 / 不早于开始日期用于资源平衡，约束修改后重新核验每天8小时容量。 / 实际开始/完成、实际人时/成本、测试结果及接收凭据：留空。 / 估算方法：自下而上估算：按WBS活动分资源人时×仿真费率汇总；复杂度、复用条件和工作量假设逐轮复核。删除恢复、清理计时、脱敏与审计链；按模块专长重新分工，测试部署成员兼工具及自动化开发；仿真假设成熟组件和自动化工具辅助使开发工作量为独立手写初估的50%，仍保留人工复核，非已完成代码复用 / 成本控制：AC与EV尚未实际发生时留空；按同一周末截止口径比较PV、AC与EV并分析原因。 / 质量与职责控制（CR-004）：小批量提交与集成；非作者复核代码/配置并验证相关失败及边界场景。 / 交叉复核：R04牵头按具体成果安排非作者复核；同为作者时在原分配内换人。 / 质量费用：开发/预防（混合）；沿用原任务及资源费用，不重复加算。实际执行、问题及复测证据见Excel质量与变更登记区，未发生时留空。 / 仿真估算依据: 自下而上估算：按WBS活动分资源人时×仿真费率汇总；复杂度、复用条件和工作量假设逐轮复核。删除恢复、清理计时、脱敏与审计链；按模块专长重新分工，测试部署成员兼工具及自动化开发；仿真假设成熟组件和自动化工具辅助使开发工作量为独立手写初估的50%，仍保留人工复核，非已完成代码复用
- 28: 暂时性实施规划：4人、8周模拟项目计划。 / 任务：T3.16 实现运行监控与指标采集 / 需求：FR-24, IF-04, NFR-11 / 预定交付物：宿主机指标、服务状态与过期标识 / 验收依据：AC-14 / 仿真负责人：R04 / 计划日期：2026-10-302026-11-02 / 工期：2工作日 / 分资源人时：R01=0.0；R02=4.0；R03=4.0；R04=10.0 / 前置关系：T3.1FS+0工作日; T2.3FS+0工作日 / 估算依据：实际宿主采集与失败标识，复用监控库；按模块专长重新分工，测试部署成员兼工具及自动化开发；仿真假设成熟组件和自动化工具辅助使开发工作量为独立手写初估的50%，仍保留人工复核，非已完成代码复用 / 不早于开始日期用于资源平衡，约束修改后重新核验每天8小时容量。 / 实际开始/完成、实际人时/成本、测试结果及接收凭据：留空。 / 估算方法：自下而上估算：按WBS活动分资源人时×仿真费率汇总；复杂度、复用条件和工作量假设逐轮复核。实际宿主采集与失败标识，复用监控库；按模块专长重新分工，测试部署成员兼工具及自动化开发；仿真假设成熟组件和自动化工具辅助使开发工作量为独立手写初估的50%，仍保留人工复核，非已完成代码复用 / 成本控制：AC与EV尚未实际发生时留空；按同一周末截止口径比较PV、AC与EV并分析原因。 / 质量与职责控制（CR-004）：小批量提交与集成；非作者复核代码/配置并验证相关失败及边界场景。 / 交叉复核：R02牵头按具体成果安排非作者复核；同为作者时在原分配内换人。 / 质量费用：开发/预防（混合）；沿用原任务及资源费用，不重复加算。实际执行、问题及复测证据见Excel质量与变更登记区，未发生时留空。 / 仿真估算依据: 自下而上估算：按WBS活动分资源人时×仿真费率汇总；复杂度、复用条件和工作量假设逐轮复核。实际宿主采集与失败标识，复用监控库；按模块专长重新分工，测试部署成员兼工具及自动化开发；仿真假设成熟组件和自动化工具辅助使开发工作量为独立手写初估的50%，仍保留人工复核，非已完成代码复用
- 29: 暂时性实施规划：4人、8周模拟项目计划。 / 任务：T3.17 实现批次冻结与MOCK交换 / 需求：FR-26, IF-01 / 预定交付物：批次、摘要、MOCK回执与恢复 / 验收依据：AC-10A / 仿真负责人：R02 / 计划日期：2026-11-122026-11-16 / 工期：3工作日 / 分资源人时：R01=0.0；R02=15.0；R03=4.0；R04=2.0 / 前置关系：T3.10SS+1工作日; T2.3FS+0工作日 / 估算依据：批次冻结、黄金摘要、MOCK回执及恢复；按模块专长重新分工，测试部署成员兼工具及自动化开发；仿真假设成熟组件和自动化工具辅助使开发工作量为独立手写初估的50%，仍保留人工复核，非已完成代码复用；已确认SRS接口后先交付内部接口骨架，模块重叠编码；集成和验收等待全部相关模块完成 / 不早于开始日期用于资源平衡，约束修改后重新核验每天8小时容量。 / 实际开始/完成、实际人时/成本、测试结果及接收凭据：留空。 / 估算方法：自下而上估算：按WBS活动分资源人时×仿真费率汇总；复杂度、复用条件和工作量假设逐轮复核。批次冻结、黄金摘要、MOCK回执及恢复；按模块专长重新分工，测试部署成员兼工具及自动化开发；仿真假设成熟组件和自动化工具辅助使开发工作量为独立手写初估的50%，仍保留人工复核，非已完成代码复用；已确认SRS接口后先交付内部接口骨架，模块重叠编码；集成和验收等待全部相关模块完成 / 成本控制：AC与EV尚未实际发生时留空；按同一周末截止口径比较PV、AC与EV并分析原因。 / 质量与职责控制（CR-004）：小批量提交与集成；非作者复核代码/配置并验证相关失败及边界场景。 / 交叉复核：R04牵头按具体成果安排非作者复核；同为作者时在原分配内换人。 / 质量费用：开发/预防（混合）；沿用原任务及资源费用，不重复加算。实际执行、问题及复测证据见Excel质量与变更登记区，未发生时留空。 / 仿真估算依据: 自下而上估算：按WBS活动分资源人时×仿真费率汇总；复杂度、复用条件和工作量假设逐轮复核。批次冻结、黄金摘要、MOCK回执及恢复；按模块专长重新分工，测试部署成员兼工具及自动化开发；仿真假设成熟组件和自动化工具辅助使开发工作量为独立手写初估的50%，仍保留人工复核，非已完成代码复用；已确认SRS接口后先交付内部接口骨架，模块重叠编码；集成和验收等待全部相关模块完成
- 30: 暂时性实施规划：4人、8周模拟项目计划。 / 任务：T3.18 实现实际REAL协议适配 / 需求：FR-26, IF-01 / 预定交付物：实际认证、字段映射与传输适配 / 验收依据：AC-10B / 仿真负责人：R01 / 计划日期：2026-11-122026-11-16 / 工期：3工作日 / 分资源人时：R01=15.0；R02=0.0；R03=0.0；R04=3.0 / 前置关系：T2.4FS+0工作日; T2.3FS+0工作日 / 估算依据：按假定已具备的真实协议实现认证、映射及传输；复用批次界面，不另行重复前端开发；按模块专长重新分工，测试部署成员兼工具及自动化开发；仿真假设成熟组件和自动化工具辅助使开发工作量为独立手写初估的50%，仍保留人工复核，非已完成代码复用 / 不早于开始日期用于资源平衡，约束修改后重新核验每天8小时容量。 / 实际开始/完成、实际人时/成本、测试结果及接收凭据：留空。 / 估算方法：自下而上估算：按WBS活动分资源人时×仿真费率汇总；复杂度、复用条件和工作量假设逐轮复核。外部协议和验证条件未确认；不预置未经证实的模型参数。按假定已具备的真实协议实现认证、映射及传输；复用批次界面，不另行重复前端开发；按模块专长重新分工，测试部署成员兼工具及自动化开发；仿真假设成熟组件和自动化工具辅助使开发工作量为独立手写初估的50%，仍保留人工复核，非已完成代码复用 / 成本控制：AC与EV尚未实际发生时留空；按同一周末截止口径比较PV、AC与EV并分析原因。 / 质量与职责控制（CR-004）：小批量提交与集成；非作者复核代码/配置并验证相关失败及边界场景。 / 交叉复核：R04牵头按具体成果安排非作者复核；同为作者时在原分配内换人。 / 质量费用：开发/预防（混合）；沿用原任务及资源费用，不重复加算。实际执行、问题及复测证据见Excel质量与变更登记区，未发生时留空。 / 仿真估算依据: 自下而上估算：按WBS活动分资源人时×仿真费率汇总；复杂度、复用条件和工作量假设逐轮复核。外部协议和验证条件未确认；不预置未经证实的模型参数。按假定已具备的真实协议实现认证、映射及传输；复用批次界面，不另行重复前端开发；按模块专长重新分工，测试部署成员兼工具及自动化开发；仿真假设成熟组件和自动化工具辅助使开发工作量为独立手写初估的50%，仍保留人工复核，非已完成代码复用
- 31: 暂时性实施规划：4人、8周模拟项目计划。 / 任务：T3.19 编写配置、部署、备份与回滚 / 需求：NFR-04, NFR-05, NFR-11 / 预定交付物：运行脚本、备份恢复与配置说明 / 验收依据：AC-12, AC-14 / 仿真负责人：R04 / 计划日期：2026-10-272026-10-29 / 工期：3工作日 / 分资源人时：R01=2.0；R02=4.0；R03=0.0；R04=10.0 / 前置关系：T3.1FS+0工作日; T2.2FS+0工作日 / 估算依据：部署、配置、备份、迁移和回滚脚本；仿真假设成熟组件和自动化工具辅助使开发工作量为独立手写初估的50%，仍保留人工复核，非已完成代码复用 / 不早于开始日期用于资源平衡，约束修改后重新核验每天8小时容量。 / 实际开始/完成、实际人时/成本、测试结果及接收凭据：留空。 / 估算方法：自下而上估算：按WBS活动分资源人时×仿真费率汇总；复杂度、复用条件和工作量假设逐轮复核。部署、配置、备份、迁移和回滚脚本；仿真假设成熟组件和自动化工具辅助使开发工作量为独立手写初估的50%，仍保留人工复核，非已完成代码复用 / 成本控制：AC与EV尚未实际发生时留空；按同一周末截止口径比较PV、AC与EV并分析原因。 / 质量与职责控制（CR-004）：小批量提交与集成；非作者复核代码/配置并验证相关失败及边界场景。 / 交叉复核：R01牵头按具体成果安排非作者复核；同为作者时在原分配内换人。 / 质量费用：开发/预防（混合）；沿用原任务及资源费用，不重复加算。实际执行、问题及复测证据见Excel质量与变更登记区，未发生时留空。 / 仿真估算依据: 自下而上估算：按WBS活动分资源人时×仿真费率汇总；复杂度、复用条件和工作量假设逐轮复核。部署、配置、备份、迁移和回滚脚本；仿真假设成熟组件和自动化工具辅助使开发工作量为独立手写初估的50%，仍保留人工复核，非已完成代码复用

| ID | WBS | Task | Duration | Start | Finish | Predecessors | Total slack | Free slack | Constraint | Deadline | Resources | Work | Cost | 原WBS | 需求映射 | Text3 | 预定交付物 | 验收依据 | 计划状态 | 责任资源ID | 相对周次 | 估算方法 | 估算成熟度 | 成本及储备控制 | 周次复核目标 | 质量活动类别 | 质量活动与证据 | 交叉复核安排 | 质量费用分类 | 质量标准编号 |
| --- | --- | --- | --- | --- | --- | --- | --- | --- | --- | --- | --- | --- | --- | --- | --- | --- | --- | --- | --- | --- | --- | --- | --- | --- | --- | --- | --- | --- | --- | --- |
| 32 | 1.4 | **T4 集成、测试与回归** | 15d? | 2026-11-17 | 2026-12-07 |  | 1d |  |  |  |  | 258h | 26,620 | T4 |  |  |  |  |  |  |  |  |  |  |  |  |  |  |  |  |
| 33 | 1.4.1 | 评审主业务链阶段成果 | 1d? | 2026-11-20 | 2026-11-20 | 18, 19, 26 | 3d | 0d | start no earlier than 2026-11-20 | 2026-12-11 | 刘显尘（仿真项目经理） [50%]; 成员B（仿真后端） [25%]; 成员C（仿真前端） [25%]; 成员D（仿真测试部署） [50%] | 12h | 1,200 | T4.1 | FR-02～11, FR-19～23 | 阶段评审 | 主业务链阶段评审记录 | AC-01～03, AC-08 | 仿真计划，未执行 | R01 | W5–W5 | WBS自下而上 | 模拟估算；逐周复核前提 | 按累计PV、AC、EV复核；基线变化先办理CR。 | W1–W8每周复核；W2/W4/W6/W8阶段重点复核。 | 成果评审及集成 | 对照AC演示、检查集成契约和遗留问题；结果不符则登记处置。 | R04牵头按具体成果安排非作者复核；同为作者时在原分配内换人。 | 评估/集成（混合） |  |
| 34 | 1.4.2 | 完成本地模块集成 | 2d? | 2026-11-23 | 2026-11-24 | 23, 25, 27, 28, 29, 31, 33, 24 | 3d | 0d | start no earlier than 2026-11-23 | 2026-12-11 | 刘显尘（仿真项目经理） [50%]; 成员B（仿真后端） [62.5%]; 成员C（仿真前端） [50%]; 成员D（仿真测试部署） [50%] | 34h | 3,520 | T4.2 | FR-01～28, IF-01～04 | 集成 | 可构建本地集成版本 | 集成评审 | 仿真计划，未执行 | R02 | W6–W6 | WBS自下而上 | 模拟估算；逐周复核前提 | 按累计PV、AC、EV复核；基线变化先办理CR。 | W1–W8每周复核；W2/W4/W6/W8阶段重点复核。 | 成果评审及集成 | 对照AC演示、检查集成契约和遗留问题；结果不符则登记处置。 | R04牵头按具体成果安排非作者复核；同为作者时在原分配内换人。 | 评估/集成（混合） |  |
| 35 | 1.4.3 | 执行业务功能与边界测试 | 3d? | 2026-11-30 | 2026-12-02 | 34, 5 | 1d | 0d | start no earlier than 2026-11-30 | 2026-12-11 | 刘显尘（仿真项目经理） [33.3%]; 成员B（仿真后端） [33.3%]; 成员C（仿真前端） [33.3%]; 成员D（仿真测试部署） [50%] | 36h | 3,640 | T4.3 | FR-01～28, IF-02, IF-03 | 测试 | AC-01～09结果与缺陷记录 | AC-01～09 | 仿真计划，未执行 | R04 | W7–W7 | WBS自下而上 | 模拟估算；逐周复核前提 | 按累计PV、AC、EV复核；基线变化先办理CR。 | W1–W8每周复核；W2/W4/W6/W8阶段重点复核。 | 质量控制 | 按Q01–Q15对应范围记录环境、版本、预期/实际、失败和可核验证据。 | R01牵头按具体成果安排非作者复核；同为作者时在原分配内换人。 | 评估 | Q01, Q02, Q03, Q04, Q05, Q06, Q07, Q08 |
| 36 | 1.4.4 | 验证MOCK回执与黄金摘要 | 2d? | 2026-11-17 | 2026-11-18 | 29, 5 | 11d | 10d | start no earlier than 2026-11-17 | 2026-12-11 | 成员B（仿真后端） [50%]; 成员D（仿真测试部署） [50%] | 16h | 1,680 | T4.4 | FR-26, IF-01 | 测试 | 跨语言摘要、回执及异常恢复证据 | AC-10A | 仿真计划，未执行 | R04 | W5–W5 | WBS自下而上 | 模拟估算；逐周复核前提 | 按累计PV、AC、EV复核；基线变化先办理CR。 | W1–W8每周复核；W2/W4/W6/W8阶段重点复核。 | 质量控制 | 按Q01–Q15对应范围记录环境、版本、预期/实际、失败和可核验证据。 | R02牵头按具体成果安排非作者复核；同为作者时在原分配内换人。 | 评估 | Q09 |
| 37 | 1.4.5 | 完成实际国家交换验证 | 2d? | 2026-11-19 | 2026-11-20 | 30, 10 | 9d | 8d | start no earlier than 2026-11-19 | 2026-12-11 | 刘显尘（仿真项目经理） [37.5%]; 成员B（仿真后端） [62.5%]; 成员D（仿真测试部署） [25%] | 20h | 2,160 | T4.5 | FR-26, IF-01 | 条件测试 | 实际接收凭据与AC-10B记录 | AC-10B | 仿真计划，未执行 | R04 | W5–W5 | WBS自下而上 | 模拟估算；逐周复核前提 | 按累计PV、AC、EV复核；基线变化先办理CR。 | W1–W8每周复核；W2/W4/W6/W8阶段重点复核。 | 质量控制 | 按Q01–Q15对应范围记录环境、版本、预期/实际、失败和可核验证据。 | R01牵头按具体成果安排非作者复核；同为作者时在原分配内换人。 | 评估 | Q10 |
| 38 | 1.4.6 | 验证安全、认证和并发一致性 | 3d? | 2026-11-25 | 2026-11-27 | 34, 5 | 4d | 3d | start no earlier than 2026-11-25 | 2026-12-11 | 刘显尘（仿真项目经理） [41.7%]; 成员B（仿真后端） [41.7%]; 成员D（仿真测试部署） [33.3%] | 28h | 2,920 | T4.6 | NFR-06～09, FR-01, FR-27, IF-02 | 测试 | 越权、漏洞、限流与并发证据 | AC-05, AC-08, AC-09, AC-13 | 仿真计划，未执行 | R04 | W6–W6 | WBS自下而上 | 模拟估算；逐周复核前提 | 按累计PV、AC、EV复核；基线变化先办理CR。 | W1–W8每周复核；W2/W4/W6/W8阶段重点复核。 | 质量控制 | 按Q01–Q15对应范围记录环境、版本、预期/实际、失败和可核验证据。 | R01牵头按具体成果安排非作者复核；同为作者时在原分配内换人。 | 评估 | Q05, Q08, Q14 |
| 39 | 1.4.7 | 执行容量、性能与导出测试 | 3d? | 2026-11-25 | 2026-11-27 | 34, 5 | 4d | 3d | start no earlier than 2026-11-25 | 2026-12-11 | 成员B（仿真后端） [33.3%]; 成员C（仿真前端） [33.3%]; 成员D（仿真测试部署） [33.3%] | 24h | 2,480 | T4.7 | NFR-01～03 | 测试 | 负载、P95、成功率和导出报告 | AC-11 | 仿真计划，未执行 | R04 | W6–W6 | WBS自下而上 | 模拟估算；逐周复核前提 | 按累计PV、AC、EV复核；基线变化先办理CR。 | W1–W8每周复核；W2/W4/W6/W8阶段重点复核。 | 质量控制 | 按Q01–Q15对应范围记录环境、版本、预期/实际、失败和可核验证据。 | R02牵头按具体成果安排非作者复核；同为作者时在原分配内换人。 | 评估 | Q11, Q12 |
| 40 | 1.4.8 | 验证备份恢复与72小时运行 | 4d? | 2026-11-27 | 2026-12-02 | 34, 31 | 1d | 0d | start no earlier than 2026-11-27 | 2026-12-11 | 刘显尘（仿真项目经理） [12.5%]; 成员B（仿真后端） [12.5%]; 成员D（仿真测试部署） [25%] | 16h | 1,600 | T4.8 | NFR-04, NFR-05 | 测试 | 恢复、重启与72小时运行记录 | AC-12 | 仿真计划，未执行 | R04 | W6–W7 | WBS自下而上 | 模拟估算；逐周复核前提 | 按累计PV、AC、EV复核；基线变化先办理CR。 | W1–W8每周复核；W2/W4/W6/W8阶段重点复核。 | 质量控制 | 按Q01–Q15对应范围记录环境、版本、预期/实际、失败和可核验证据。 | R01牵头按具体成果安排非作者复核；同为作者时在原分配内换人。 | 评估 | Q13 |
| 41 | 1.4.9 | 验证兼容、部署与监控 | 2d? | 2026-11-25 | 2026-11-26 | 34, 28, 31 | 5d | 4d | start no earlier than 2026-11-25 | 2026-12-11 | 成员B（仿真后端） [25%]; 成员C（仿真前端） [50%]; 成员D（仿真测试部署） [25%] | 16h | 1,640 | T4.9 | NFR-10, NFR-11, IF-04 | 测试 | 浏览器、表格软件和部署证据 | AC-14 | 仿真计划，未执行 | R04 | W6–W6 | WBS自下而上 | 模拟估算；逐周复核前提 | 按累计PV、AC、EV复核；基线变化先办理CR。 | W1–W8每周复核；W2/W4/W6/W8阶段重点复核。 | 质量控制 | 按Q01–Q15对应范围记录环境、版本、预期/实际、失败和可核验证据。 | R02牵头按具体成果安排非作者复核；同为作者时在原分配内换人。 | 评估 | Q15 |
| 42 | 1.4.10 | 修复缺陷并复核需求覆盖 | 3d? | 2026-12-03 | 2026-12-07 | 35, 36, 38, 39, 40, 41, 37 | 1d | 0d | start no earlier than 2026-12-03 | 2026-12-11 | 刘显尘（仿真项目经理） [41.7%]; 成员B（仿真后端） [66.7%]; 成员C（仿真前端） [66.7%]; 成员D（仿真测试部署） [58.3%] | 56h | 5,780 | T4.10 | FR-01～28, NFR-01～11, IF-01～04 | 修复回归 | 缺陷修复、回归与未执行项记录 | AC-01～14 | 仿真计划，未执行 | R02 | W7–W8 | WBS自下而上 | 模拟估算；逐周复核前提 | 按累计PV、AC、EV复核；基线变化先办理CR。 | W1–W8每周复核；W2/W4/W6/W8阶段重点复核。 | 缺陷修复与质量控制 | 按缺陷号修复、记录根因及版本；非作者复测，失败重开。 | R04牵头按具体成果安排非作者复核；同为作者时在原分配内换人。 | 内部缺陷修复/回归（混合） |  |
| 43 | 1.5 | **T5 部署、交付与计划定稿** | 15d? | 2026-11-23 | 2026-12-11 |  | 0d |  |  |  |  | 112h | 11,140 | T5 |  |  |  |  |  |  |  |  |  |  |  |  |  |  |  |  |
| 44 | 1.5.1 | 部署拟定试运行环境 | 2d? | 2026-11-23 | 2026-11-24 | 34SS, 31 | 10d | 9d | start no earlier than 2026-11-23 | 2026-12-11 | 刘显尘（仿真项目经理） [37.5%]; 成员B（仿真后端） [25%]; 成员D（仿真测试部署） [37.5%] | 16h | 1,620 | T5.1 | NFR-11 | 部署 | 部署配置、迁移与回滚记录 | AC-14 | 仿真计划，未执行 | R01 | W6–W6 | WBS自下而上 | 模拟估算；逐周复核前提 | 按累计PV、AC、EV复核；基线变化先办理CR。 | W1–W8每周复核；W2/W4/W6/W8阶段重点复核。 | 交付过程及成果复核 | 核对交付版本、操作资料、用户反馈和未完成项；不预填实际结论。 | R04牵头按具体成果安排非作者复核；同为作者时在原分配内换人。 | 交付/评估（混合） |  |
| 45 | 1.5.2 | 安排业务试运行与反馈 | 2d? | 2026-12-08 | 2026-12-09 | 42, 44 | 1d |  | start no earlier than 2026-12-08 | 2026-12-11 | 刘显尘（仿真项目经理） [37.5%]; 成员B（仿真后端） [12.5%]; 成员C（仿真前端） [25%]; 成员D（仿真测试部署） [37.5%] | 18h | 1,780 | T5.2 | FR-01～28 | 试运行 | 试运行记录与反馈处理 | 试运行评审 | 仿真计划，未执行 | R01 | W8–W8 | WBS自下而上 | 模拟估算；逐周复核前提 | 按累计PV、AC、EV复核；基线变化先办理CR。 | W1–W8每周复核；W2/W4/W6/W8阶段重点复核。 | 交付过程及成果复核 | 核对交付版本、操作资料、用户反馈和未完成项；不预填实际结论。 | R04牵头按具体成果安排非作者复核；同为作者时在原分配内换人。 | 交付/评估（混合） |  |
| 46 | 1.5.3 | 编写操作与开发维护说明 | 4d? | 2026-11-30 | 2026-12-03 | 33, 5 | 3d | 2d | start no earlier than 2026-11-30 | 2026-12-11 | 刘显尘（仿真项目经理） [37.5%]; 成员B（仿真后端） [12.5%]; 成员C（仿真前端） [25%]; 成员D（仿真测试部署） [25%] | 32h | 3,200 | T5.3 | NFR-11 | 交付准备 | 企业、市、省和技术管理操作说明 | 文档评审 | 仿真计划，未执行 | R01 | W7–W7 | WBS自下而上 | 模拟估算；逐周复核前提 | 按累计PV、AC、EV复核；基线变化先办理CR。 | W1–W8每周复核；W2/W4/W6/W8阶段重点复核。 | 交付过程及成果复核 | 核对交付版本、操作资料、用户反馈和未完成项；不预填实际结论。 | R04牵头按具体成果安排非作者复核；同为作者时在原分配内换人。 | 交付/评估（混合） |  |
| 47 | 1.5.4 | 安排操作培训与演示 | 1d? | 2026-12-10 | 2026-12-10 | 42, 46 | 0d |  | start no earlier than 2026-12-10 | 2026-12-11 | 刘显尘（仿真项目经理） [50%]; 成员C（仿真前端） [25%]; 成员D（仿真测试部署） [25%] | 8h | 780 | T5.4 | 项目交付 | 培训 | 培训资料、演示与反馈 | 培训反馈 | 仿真计划，未执行 | R01 | W8–W8 | WBS自下而上 | 模拟估算；逐周复核前提 | 按累计PV、AC、EV复核；基线变化先办理CR。 | W1–W8每周复核；W2/W4/W6/W8阶段重点复核。 | 交付过程及成果复核 | 核对交付版本、操作资料、用户反馈和未完成项；不预填实际结论。 | R04牵头按具体成果安排非作者复核；同为作者时在原分配内换人。 | 交付/评估（混合） |  |
| 48 | 1.5.5 | 整理代码、配置和验证证据 | 2d? | 2026-12-08 | 2026-12-09 | 42, 46 | 1d |  | start no earlier than 2026-12-08 | 2026-12-11 | 刘显尘（仿真项目经理） [25%]; 成员B（仿真后端） [25%]; 成员C（仿真前端） [12.5%]; 成员D（仿真测试部署） [50%] | 18h | 1,800 | T5.5 | NFR-11, IF-01～04 | 移交 | 构建代码、运行脚本与证据包 | SRS 9.5 | 仿真计划，未执行 | R04 | W8–W8 | WBS自下而上 | 模拟估算；逐周复核前提 | 按累计PV、AC、EV复核；基线变化先办理CR。 | W1–W8每周复核；W2/W4/W6/W8阶段重点复核。 | 交付过程及成果复核 | 核对交付版本、操作资料、用户反馈和未完成项；不预填实际结论。 | R01牵头按具体成果安排非作者复核；同为作者时在原分配内换人。 | 交付/评估（混合） |  |
| 49 | 1.5.6 | 完成最终项目验收 | 1d? | 2026-12-11 | 2026-12-11 | 45, 47, 48, 37 | 0d |  | start no earlier than 2026-12-11 | 2026-12-11 | 刘显尘（仿真项目经理） [50%]; 成员B（仿真后端） [25%]; 成员C（仿真前端） [25%]; 成员D（仿真测试部署） [50%] | 12h | 1,200 | T5.6 | FR-01～28, NFR-01～11, IF-01～04 | 条件验收 | 完整需求证据与实际交换接收凭据 | SRS 9.4, AC-10B | 仿真计划，未执行 | R01 | W8–W8 | WBS自下而上 | 模拟估算；逐周复核前提 | 按累计PV、AC、EV复核；基线变化先办理CR。 | W1–W8每周复核；W2/W4/W6/W8阶段重点复核。 | 质量控制及验收 | 按SRS 9.4–9.5及Q16核对全部证据；AC-10B缺失不标为全部通过。 | R04牵头按具体成果安排非作者复核；同为作者时在原分配内换人。 | 评估 | Q16 |
| 50 | 1.5.7 | 汇总8周模拟的最终项目计划 | 1d? | 2026-12-11 | 2026-12-11 | 4, 11, 49SS | 0d |  | start no earlier than 2026-12-11 | 2026-12-13 | 刘显尘（仿真项目经理） [50%]; 成员D（仿真测试部署） [50%] | 8h | 760 | T5.7 | 项目管理 | 计划定稿 | 完整项目计划与迭代说明 | 完整计划及版本记录评审 | 仿真计划，未执行 | R01 | W8–W8 | WBS自下而上 | 模拟估算；逐周复核前提 | 按累计PV、AC、EV复核；基线变化先办理CR。 | W1–W8每周复核；W2/W4/W6/W8阶段重点复核。 | 交付过程及成果复核 | 核对交付版本、操作资料、用户反馈和未完成项；不预填实际结论。 | R04牵头按具体成果安排非作者复核；同为作者时在原分配内换人。 | 交付/评估（混合） |  |
| 51 | 1.6 | **T6 分周费用安排（不占用团队人时）** | 40d? | 2026-10-19 | 2026-12-11 |  | 0d |  |  |  |  |  | 16,802.5 | T6 |  |  |  |  |  |  |  |  |  |  |  |  |  |  |  |  |
| 52 | 1.6.1 | W1非人工与间接费用 | 5d? | 2026-10-19 | 2026-10-23 |  | 35d |  | start no earlier than 2026-10-19 |  | C06 开发/测试部署资源 [0.1%]; C07 自动化工具与算力额度 [0.1%]; C08 开发工具与软件许可 [0.1%]; C09 设备租用与折旧分摊 [0.1%]; C11 一般管理人员费用分摊 [0.1%]; C12 房租水电及网络分摊 [0.1%]; C13 共享办公与设施分摊 [0.1%] |  | 3,043 | C-W1 |  |  |  |  |  |  |  | 全项目分周成本基准 | PV不含管理储备 | Cost3/4为全项目PV；原生任务成本仅非人工和间接费用，不得重复相加。 | 2026-10-19至2026-10-25：需求／WBS与估算方法对应，识别成本与储备边界 |  |  |  |  |  |
| 53 | 1.6.2 | W2非人工与间接费用 | 5d? | 2026-10-26 | 2026-10-30 |  | 30d |  | start no earlier than 2026-10-26 |  | C06 开发/测试部署资源 [0.1%]; C07 自动化工具与算力额度 [0.1%]; C09 设备租用与折旧分摊 [0.1%]; C11 一般管理人员费用分摊 [0.1%]; C12 房租水电及网络分摊 [0.1%]; C13 共享办公与设施分摊 [0.1%] |  | 1,515.75 | C-W2 |  |  |  |  |  |  |  | 全项目分周成本基准 | PV不含管理储备 | Cost3/4为全项目PV；原生任务成本仅非人工和间接费用，不得重复相加。 | 2026-10-26至2026-11-01：细化WBS、外部协议条件及不确定性，检查资源和储备缺口 |  |  |  |  |  |
| 54 | 1.6.3 | W3非人工与间接费用 | 5d? | 2026-11-02 | 2026-11-06 |  | 25d |  | start no earlier than 2026-11-02 |  | C06 开发/测试部署资源 [0.1%]; C07 自动化工具与算力额度 [0.1%]; C09 设备租用与折旧分摊 [0.1%]; C11 一般管理人员费用分摊 [0.1%]; C12 房租水电及网络分摊 [0.1%]; C13 共享办公与设施分摊 [0.1%] |  | 1,925.75 | C-W3 |  |  |  |  |  |  |  | 全项目分周成本基准 | PV不含管理储备 | Cost3/4为全项目PV；原生任务成本仅非人工和间接费用，不得重复相加。 | 2026-11-02至2026-11-08：检查业务活动投入与预期产出，复核剩余工作估算 |  |  |  |  |  |
| 55 | 1.6.4 | W4非人工与间接费用 | 5d? | 2026-11-09 | 2026-11-13 |  | 20d |  | start no earlier than 2026-11-09 |  | C06 开发/测试部署资源 [0.1%]; C07 自动化工具与算力额度 [0.1%]; C09 设备租用与折旧分摊 [0.1%]; C11 一般管理人员费用分摊 [0.1%]; C12 房租水电及网络分摊 [0.1%]; C13 共享办公与设施分摊 [0.1%] |  | 2,007.33 | C-W4 |  |  |  |  |  |  |  | 全项目分周成本基准 | PV不含管理储备 | Cost3/4为全项目PV；原生任务成本仅非人工和间接费用，不得重复相加。 | 2026-11-09至2026-11-15：复核主业务链、累计成本基准和完成工作预算口径 |  |  |  |  |  |
| 56 | 1.6.5 | W5非人工与间接费用 | 5d? | 2026-11-16 | 2026-11-20 |  | 15d |  | start no earlier than 2026-11-16 |  | C06 开发/测试部署资源 [0.1%]; C07 自动化工具与算力额度 [0.1%]; C09 设备租用与折旧分摊 [0.1%]; C11 一般管理人员费用分摊 [0.1%]; C12 房租水电及网络分摊 [0.1%]; C13 共享办公与设施分摊 [0.1%] |  | 2,004.67 | C-W5 |  |  |  |  |  |  |  | 全项目分周成本基准 | PV不含管理储备 | Cost3/4为全项目PV；原生任务成本仅非人工和间接费用，不得重复相加。 | 2026-11-16至2026-11-22：复核模块集成、剩余工作量及外部条件变化 |  |  |  |  |  |
| 57 | 1.6.6 | W6非人工与间接费用 | 5d? | 2026-11-23 | 2026-11-27 |  | 10d |  | start no earlier than 2026-11-23 |  | C06 开发/测试部署资源 [0.1%]; C07 自动化工具与算力额度 [0.1%]; C09 设备租用与折旧分摊 [0.1%]; C11 一般管理人员费用分摊 [0.1%]; C12 房租水电及网络分摊 [0.1%]; C13 共享办公与设施分摊 [0.1%] |  | 2,204 | C-W6 |  |  |  |  |  |  |  | 全项目分周成本基准 | PV不含管理储备 | Cost3/4为全项目PV；原生任务成本仅非人工和间接费用，不得重复相加。 | 2026-11-23至2026-11-29：复核质量活动、验证费用及真实交换条件 |  |  |  |  |  |
| 58 | 1.6.7 | W7非人工与间接费用 | 5d? | 2026-11-30 | 2026-12-04 |  | 5d |  | start no earlier than 2026-11-30 |  | C06 开发/测试部署资源 [0.1%]; C07 自动化工具与算力额度 [0.1%]; C09 设备租用与折旧分摊 [0.1%]; C11 一般管理人员费用分摊 [0.1%]; C12 房租水电及网络分摊 [0.1%]; C13 共享办公与设施分摊 [0.1%] |  | 2,119.67 | C-W7 |  |  |  |  |  |  |  | 全项目分周成本基准 | PV不含管理储备 | Cost3/4为全项目PV；原生任务成本仅非人工和间接费用，不得重复相加。 | 2026-11-30至2026-12-06：复核验证、缺陷修复和交付准备的进度成本影响 |  |  |  |  |  |
| 59 | 1.6.8 | W8非人工与间接费用 | 5d? | 2026-12-07 | 2026-12-11 |  | 0d |  | start no earlier than 2026-12-07 |  | C06 开发/测试部署资源 [0.1%]; C07 自动化工具与算力额度 [0.1%]; C09 设备租用与折旧分摊 [0.1%]; C10 部署培训及必要差旅 [0.1%]; C11 一般管理人员费用分摊 [0.1%]; C12 房租水电及网络分摊 [0.1%]; C13 共享办公与设施分摊 [0.1%] |  | 1,982.33 | C-W8 |  |  |  |  |  |  |  | 全项目分周成本基准 | PV不含管理储备 | Cost3/4为全项目PV；原生任务成本仅非人工和间接费用，不得重复相加。 | 2026-12-07至2026-12-13：复核最终计划、范围质量覆盖与全部真实变更证据 |  |  |  |  |  |

Notes:
- 32: 暂时性实施规划；下属活动为计划，未登记实际完成。
- 33: 暂时性实施规划：4人、8周模拟项目计划。 / 任务：T4.1 评审主业务链阶段成果 / 需求：FR-02～11, FR-19～23 / 预定交付物：主业务链阶段评审记录 / 验收依据：AC-01～03, AC-08 / 仿真负责人：R01 / 计划日期：2026-11-202026-11-20 / 工期：1工作日 / 分资源人时：R01=4；R02=2；R03=2；R04=4 / 前置关系：T3.6FS+0工作日; T3.7FS+0工作日; T3.14FS+0工作日 / 估算依据：四人阶段评审、检查AC与未解决问题 / 不早于开始日期用于资源平衡，约束修改后重新核验每天8小时容量。 / 实际开始/完成、实际人时/成本、测试结果及接收凭据：留空。 / 估算方法：自下而上估算：按WBS活动分资源人时×仿真费率汇总；复杂度、复用条件和工作量假设逐轮复核。四人阶段评审、检查AC与未解决问题 / 成本控制：AC与EV尚未实际发生时留空；按同一周末截止口径比较PV、AC与EV并分析原因。 / 质量与职责控制（CR-004）：对照AC演示、检查集成契约和遗留问题；结果不符则登记处置。 / 交叉复核：R04牵头按具体成果安排非作者复核；同为作者时在原分配内换人。 / 质量费用：评估/集成（混合）；沿用原任务及资源费用，不重复加算。实际执行、问题及复测证据见Excel质量与变更登记区，未发生时留空。 / 仿真估算依据: 自下而上估算：按WBS活动分资源人时×仿真费率汇总；复杂度、复用条件和工作量假设逐轮复核。四人阶段评审、检查AC与未解决问题 / 依赖说明: T3.6FS+0d; T3.7FS+0d; T3.14FS+0d
- 34: 暂时性实施规划：4人、8周模拟项目计划。 / 任务：T4.2 完成本地模块集成 / 需求：FR-01～28, IF-01～04 / 预定交付物：可构建本地集成版本 / 验收依据：集成评审 / 仿真负责人：R02 / 计划日期：2026-11-232026-11-24 / 工期：2工作日 / 分资源人时：R01=8；R02=10；R03=8；R04=8 / 前置关系：T3.11FS+0工作日; T3.13FS+0工作日; T3.15FS+0工作日; T3.16FS+0工作日; T3.17FS+0工作日; T3.19FS+0工作日; T4.1FS+0工作日; T3.12FS+0工作日 / 估算依据：多模块集成、数据一致性和联调 / 不早于开始日期用于资源平衡，约束修改后重新核验每天8小时容量。 / 实际开始/完成、实际人时/成本、测试结果及接收凭据：留空。 / 估算方法：自下而上估算：按WBS活动分资源人时×仿真费率汇总；复杂度、复用条件和工作量假设逐轮复核。多模块集成、数据一致性和联调 / 成本控制：AC与EV尚未实际发生时留空；按同一周末截止口径比较PV、AC与EV并分析原因。 / 质量与职责控制（CR-004）：对照AC演示、检查集成契约和遗留问题；结果不符则登记处置。 / 交叉复核：R04牵头按具体成果安排非作者复核；同为作者时在原分配内换人。 / 质量费用：评估/集成（混合）；沿用原任务及资源费用，不重复加算。实际执行、问题及复测证据见Excel质量与变更登记区，未发生时留空。 / 仿真估算依据: 自下而上估算：按WBS活动分资源人时×仿真费率汇总；复杂度、复用条件和工作量假设逐轮复核。多模块集成、数据一致性和联调 / 依赖说明: T3.11FS+0d; T3.13FS+0d; T3.15FS+0d; T3.16FS+0d; T3.17FS+0d; T3.19FS+0d; T4.1FS+0d; T3.12FS+0d
- 35: 暂时性实施规划：4人、8周模拟项目计划。 / 任务：T4.3 执行业务功能与边界测试 / 需求：FR-01～28, IF-02, IF-03 / 预定交付物：AC-01～09结果与缺陷记录 / 验收依据：AC-01～09 / 仿真负责人：R04 / 计划日期：2026-11-302026-12-02 / 工期：3工作日 / 分资源人时：R01=8；R02=8；R03=8；R04=12 / 前置关系：T4.2FS+0工作日; T1.3FS+0工作日 / 估算依据：QA主导，开发人员并行执行AC-01至09 / 不早于开始日期用于资源平衡，约束修改后重新核验每天8小时容量。 / 实际开始/完成、实际人时/成本、测试结果及接收凭据：留空。 / 预定质量标准： / Q01 档案、备案与字典 / 预定质量标准：编码、字段、变更备案、历史快照与字典按SRS AC-01逐项验证 / 依据：AC-01 / 预定证据与条件：保留版本、前置数据、预期/实际与证据；人员、环境和执行记录待确认 / 实际执行人： / 实际日期/结果： / Q02 填报与窗口 / 预定质量标准：字段边界、条件必填、窗口和补报、版本及幂等按AC-02验证 / 依据：AC-02 / 预定证据与条件：保留版本、前置数据、预期/实际与证据；人员、环境和执行记录待确认 / 实际执行人： / 实际日期/结果： / Q03 审核与补报 / 预定质量标准：企业→市→省状态顺序、退回重提、补报和基准纠错按AC-03验证 / 依据：AC-03 / 预定证据与条件：保留版本、前置数据、预期/实际与证据；人员、环境和执行记录待确认 / 实际执行人： / 实际日期/结果： / Q04 修订、快照与审计 / 预定质量标准：原值不覆盖，生效撤销链与统计/批次快照一致，按AC-04验证 / 依据：AC-04 / 预定证据与条件：保留版本、前置数据、预期/实际与证据；人员、环境和执行记录待确认 / 实际执行人： / 实际日期/结果： / Q05 权限、用户与通知 / 预定质量标准：跨企业跨市拒绝、撤权生效、通知可见范围、管理员生命周期 / 依据：AC-05, AC-08 / 预定证据与条件：保留版本、前置数据、预期/实际与证据；人员、环境和执行记录待确认 / 实际执行人： / 实际日期/结果： / Q06 查询导出 / 预定质量标准：13条件、命中行数、中文前导零、安全文本、过期和下载权限一致 / 依据：AC-06, IF-03 / 预定证据与条件：保留版本、前置数据、预期/实际与证据；人员、环境和执行记录待确认 / 实际执行人： / 实际日期/结果： / Q07 指标与图表 / 预定质量标准：按SRS 3.9复算六指标，缺样本不补0、0分母不可计算、图表表格同源 / 依据：AC-07 / 预定证据与条件：保留版本、前置数据、预期/实际与证据；人员、环境和执行记录待确认 / 实际执行人： / 实际日期/结果： / Q08 删除恢复与保留 / 预定质量标准：冻结引用、删除恢复期限、脱敏、期限配置及审计按AC-09验证 / 依据：AC-09, NFR-09 / 预定证据与条件：保留版本、前置数据、预期/实际与证据；人员、环境和执行记录待确认 / 实际执行人： / 实际日期/结果： / 估算方法：自下而上估算：按WBS活动分资源人时×仿真费率汇总；复杂度、复用条件和工作量假设逐轮复核。QA主导，开发人员并行执行AC-01至09 / 成本控制：AC与EV尚未实际发生时留空；按同一周末截止口径比较PV、AC与EV并分析原因。 / 质量与职责控制（CR-004）：按Q01Q15对应范围记录环境、版本、预期/实际、失败和可核验证据。 / 交叉复核：R01牵头按具体成果安排非作者复核；同为作者时在原分配内换人。 / 质量费用：评估；沿用原任务及资源费用，不重复加算。实际执行、问题及复测证据见Excel质量与变更登记区，未发生时留空。 / 仿真估算依据: 自下而上估算：按WBS活动分资源人时×仿真费率汇总；复杂度、复用条件和工作量假设逐轮复核。QA主导，开发人员并行执行AC-01至09 / 依赖说明: T4.2FS+0d; T1.3FS+0d
- 36: 暂时性实施规划：4人、8周模拟项目计划。 / 任务：T4.4 验证MOCK回执与黄金摘要 / 需求：FR-26, IF-01 / 预定交付物：跨语言摘要、回执及异常恢复证据 / 验收依据：AC-10A / 仿真负责人：R04 / 计划日期：2026-11-172026-11-18 / 工期：2工作日 / 分资源人时：R01=0；R02=8；R03=0；R04=8 / 前置关系：T3.17FS+0工作日; T1.3FS+0工作日 / 估算依据：黄金摘要、回执超时与恢复测试 / 不早于开始日期用于资源平衡，约束修改后重新核验每天8小时容量。 / 实际开始/完成、实际人时/成本、测试结果及接收凭据：留空。 / 预定质量标准： / Q09 MOCK交换 / 预定质量标准：黄金字节摘要、模拟回执、重复发送、超时UNKNOWN与恢复按AC-10A验证 / 依据：AC-10A, IF-01 / 预定证据与条件：保留版本、前置数据、预期/实际与证据；人员、环境和执行记录待确认 / 实际执行人： / 实际日期/结果： / 估算方法：自下而上估算：按WBS活动分资源人时×仿真费率汇总；复杂度、复用条件和工作量假设逐轮复核。黄金摘要、回执超时与恢复测试 / 成本控制：AC与EV尚未实际发生时留空；按同一周末截止口径比较PV、AC与EV并分析原因。 / 质量与职责控制（CR-004）：按Q01Q15对应范围记录环境、版本、预期/实际、失败和可核验证据。 / 交叉复核：R02牵头按具体成果安排非作者复核；同为作者时在原分配内换人。 / 质量费用：评估；沿用原任务及资源费用，不重复加算。实际执行、问题及复测证据见Excel质量与变更登记区，未发生时留空。 / 仿真估算依据: 自下而上估算：按WBS活动分资源人时×仿真费率汇总；复杂度、复用条件和工作量假设逐轮复核。黄金摘要、回执超时与恢复测试 / 依赖说明: T3.17FS+0d; T1.3FS+0d
- 37: 暂时性实施规划：4人、8周模拟项目计划。 / 任务：T4.5 完成实际国家交换验证 / 需求：FR-26, IF-01 / 预定交付物：实际接收凭据与AC-10B记录 / 验收依据：AC-10B / 仿真负责人：R04 / 计划日期：2026-11-192026-11-20 / 工期：2工作日 / 分资源人时：R01=6；R02=10；R03=0；R04=4 / 前置关系：T3.18FS+0工作日; T2.4FS+0工作日 / 估算依据：计划受控真实交换验证；不填实际通过记录；按模块专长重新分工，测试部署成员兼工具及自动化开发 / 不早于开始日期用于资源平衡，约束修改后重新核验每天8小时容量。 / 实际开始/完成、实际人时/成本、测试结果及接收凭据：留空。 / 预定质量标准： / Q10 真实国家交换 / 预定质量标准：实际协议、认证、字段编码映射与可核验接收凭据齐备；不能用MOCK替代 / 依据：AC-10B, IF-01 / 预定证据与条件：真实协议、端点、凭据、映射及允许数据待确认；执行日期/结果留空 / 实际执行人： / 实际日期/结果： / 估算方法：自下而上估算：按WBS活动分资源人时×仿真费率汇总；复杂度、复用条件和工作量假设逐轮复核。外部协议和验证条件未确认；不预置未经证实的模型参数。计划受控真实交换验证；不填实际通过记录；按模块专长重新分工，测试部署成员兼工具及自动化开发 / 成本控制：AC与EV尚未实际发生时留空；按同一周末截止口径比较PV、AC与EV并分析原因。 / 质量与职责控制（CR-004）：按Q01Q15对应范围记录环境、版本、预期/实际、失败和可核验证据。 / 交叉复核：R01牵头按具体成果安排非作者复核；同为作者时在原分配内换人。 / 质量费用：评估；沿用原任务及资源费用，不重复加算。实际执行、问题及复测证据见Excel质量与变更登记区，未发生时留空。 / 仿真估算依据: 自下而上估算：按WBS活动分资源人时×仿真费率汇总；复杂度、复用条件和工作量假设逐轮复核。外部协议和验证条件未确认；不预置未经证实的模型参数。计划受控真实交换验证；不填实际通过记录；按模块专长重新分工，测试部署成员兼工具及自动化开发 / 依赖说明: T3.18FS+0d; T2.4FS+0d
- 38: 暂时性实施规划：4人、8周模拟项目计划。 / 任务：T4.6 验证安全、认证和并发一致性 / 需求：NFR-06～09, FR-01, FR-27, IF-02 / 预定交付物：越权、漏洞、限流与并发证据 / 验收依据：AC-05, AC-08, AC-09, AC-13 / 仿真负责人：R04 / 计划日期：2026-11-252026-11-27 / 工期：3工作日 / 分资源人时：R01=10；R02=10；R03=0；R04=8 / 前置关系：T4.2FS+0工作日; T1.3FS+0工作日 / 估算依据：QA制定用例，PM与后端分担鉴权和并发验证 / 不早于开始日期用于资源平衡，约束修改后重新核验每天8小时容量。 / 实际开始/完成、实际人时/成本、测试结果及接收凭据：留空。 / 预定质量标准： / Q05 权限、用户与通知 / 预定质量标准：跨企业跨市拒绝、撤权生效、通知可见范围、管理员生命周期 / 依据：AC-05, AC-08 / 预定证据与条件：保留版本、前置数据、预期/实际与证据；人员、环境和执行记录待确认 / 实际执行人： / 实际日期/结果： / Q08 删除恢复与保留 / 预定质量标准：冻结引用、删除恢复期限、脱敏、期限配置及审计按AC-09验证 / 依据：AC-09, NFR-09 / 预定证据与条件：保留版本、前置数据、预期/实际与证据；人员、环境和执行记录待确认 / 实际执行人： / 实际日期/结果： / Q14 安全与一致性 / 预定质量标准：范围鉴权、HTTPS/口令/TOTP、并发审计；严重高危漏洞0、状态无部分写入 / 依据：AC-13, NFR-06～09 / 预定证据与条件：保留版本、前置数据、预期/实际与证据；人员、环境和执行记录待确认 / 实际执行人： / 实际日期/结果： / 估算方法：自下而上估算：按WBS活动分资源人时×仿真费率汇总；复杂度、复用条件和工作量假设逐轮复核。QA制定用例，PM与后端分担鉴权和并发验证 / 成本控制：AC与EV尚未实际发生时留空；按同一周末截止口径比较PV、AC与EV并分析原因。 / 质量与职责控制（CR-004）：按Q01Q15对应范围记录环境、版本、预期/实际、失败和可核验证据。 / 交叉复核：R01牵头按具体成果安排非作者复核；同为作者时在原分配内换人。 / 质量费用：评估；沿用原任务及资源费用，不重复加算。实际执行、问题及复测证据见Excel质量与变更登记区，未发生时留空。 / 仿真估算依据: 自下而上估算：按WBS活动分资源人时×仿真费率汇总；复杂度、复用条件和工作量假设逐轮复核。QA制定用例，PM与后端分担鉴权和并发验证 / 依赖说明: T4.2FS+0d; T1.3FS+0d
- 39: 暂时性实施规划：4人、8周模拟项目计划。 / 任务：T4.7 执行容量、性能与导出测试 / 需求：NFR-01～03 / 预定交付物：负载、P95、成功率和导出报告 / 验收依据：AC-11 / 仿真负责人：R04 / 计划日期：2026-11-252026-11-27 / 工期：3工作日 / 分资源人时：R01=0；R02=8；R03=8；R04=8 / 前置关系：T4.2FS+0工作日; T1.3FS+0工作日 / 估算依据：独立负载机、合成60万月报与200并发 / 不早于开始日期用于资源平衡，约束修改后重新核验每天8小时容量。 / 实际开始/完成、实际人时/成本、测试结果及接收凭据：留空。 / 预定质量标准： / Q11 容量与性能 / 预定质量标准：10,000企业/600,000月报/200并发；六类成功率各≥90%；列表等P95≤3秒，汇总≤5秒；技术错误率<1% / 依据：AC-11, NFR-01/02 / 预定证据与条件：实际压测设备、资源限额与数据准备待确认；按SRS 5.1完整口径执行 / 实际执行人： / 实际日期/结果： / Q12 导出性能 / 预定质量标准：10,000行、最多30列导出≤60秒；3次取最慢；更大数据异步可查 / 依据：AC-11, NFR-03 / 预定证据与条件：保留版本、前置数据、预期/实际与证据；人员、环境和执行记录待确认 / 实际执行人： / 实际日期/结果： / 估算方法：自下而上估算：按WBS活动分资源人时×仿真费率汇总；复杂度、复用条件和工作量假设逐轮复核。独立负载机、合成60万月报与200并发 / 成本控制：AC与EV尚未实际发生时留空；按同一周末截止口径比较PV、AC与EV并分析原因。 / 质量与职责控制（CR-004）：按Q01Q15对应范围记录环境、版本、预期/实际、失败和可核验证据。 / 交叉复核：R02牵头按具体成果安排非作者复核；同为作者时在原分配内换人。 / 质量费用：评估；沿用原任务及资源费用，不重复加算。实际执行、问题及复测证据见Excel质量与变更登记区，未发生时留空。 / 仿真估算依据: 自下而上估算：按WBS活动分资源人时×仿真费率汇总；复杂度、复用条件和工作量假设逐轮复核。独立负载机、合成60万月报与200并发 / 依赖说明: T4.2FS+0d; T1.3FS+0d
- 40: 暂时性实施规划：4人、8周模拟项目计划。 / 任务：T4.8 验证备份恢复与72小时运行 / 需求：NFR-04, NFR-05 / 预定交付物：恢复、重启与72小时运行记录 / 验收依据：AC-12 / 仿真负责人：R04 / 计划日期：2026-11-272026-12-02 / 工期：4工作日 / 分资源人时：R01=4；R02=4；R03=0；R04=8 / 前置关系：T4.2FS+0工作日; T3.19FS+0工作日 / 估算依据：4工作日覆盖不少于72自然小时，自动监测；人时只计配置、观察和恢复演练 / 不早于开始日期用于资源平衡，约束修改后重新核验每天8小时容量。 / 实际开始/完成、实际人时/成本、测试结果及接收凭据：留空。 / 预定质量标准： / Q13 运行与恢复 / 预定质量标准：72小时集成运行及重启；月可用性目标≥99.5%另持续测量；RPO≤24小时/RTO≤4小时 / 依据：AC-12, NFR-04/05 / 预定证据与条件：保留版本、前置数据、预期/实际与证据；人员、环境和执行记录待确认 / 实际执行人： / 实际日期/结果： / 估算方法：自下而上估算：按WBS活动分资源人时×仿真费率汇总；复杂度、复用条件和工作量假设逐轮复核。4工作日覆盖不少于72自然小时，自动监测；人时只计配置、观察和恢复演练 / 成本控制：AC与EV尚未实际发生时留空；按同一周末截止口径比较PV、AC与EV并分析原因。 / 质量与职责控制（CR-004）：按Q01Q15对应范围记录环境、版本、预期/实际、失败和可核验证据。 / 交叉复核：R01牵头按具体成果安排非作者复核；同为作者时在原分配内换人。 / 质量费用：评估；沿用原任务及资源费用，不重复加算。实际执行、问题及复测证据见Excel质量与变更登记区，未发生时留空。 / 仿真估算依据: 自下而上估算：按WBS活动分资源人时×仿真费率汇总；复杂度、复用条件和工作量假设逐轮复核。4工作日覆盖不少于72自然小时，自动监测；人时只计配置、观察和恢复演练 / 依赖说明: T4.2FS+0d; T3.19FS+0d
- 41: 暂时性实施规划：4人、8周模拟项目计划。 / 任务：T4.9 验证兼容、部署与监控 / 需求：NFR-10, NFR-11, IF-04 / 预定交付物：浏览器、表格软件和部署证据 / 验收依据：AC-14 / 仿真负责人：R04 / 计划日期：2026-11-252026-11-26 / 工期：2工作日 / 分资源人时：R01=0；R02=4；R03=8；R04=4 / 前置关系：T4.2FS+0工作日; T3.16FS+0工作日; T3.19FS+0工作日 / 估算依据：兼容、导出、部署和实际监控证据 / 不早于开始日期用于资源平衡，约束修改后重新核验每天8小时容量。 / 实际开始/完成、实际人时/成本、测试结果及接收凭据：留空。 / 预定质量标准： / Q15 兼容、监控与部署 / 预定质量标准：Chrome/Edge验收时最近两稳定主版本；规定分辨率与Excel/WPS；真实采集、部署迁移恢复回滚留证 / 依据：AC-14, NFR-10/11, IF-04 / 预定证据与条件：保留版本、前置数据、预期/实际与证据；人员、环境和执行记录待确认 / 实际执行人： / 实际日期/结果： / 估算方法：自下而上估算：按WBS活动分资源人时×仿真费率汇总；复杂度、复用条件和工作量假设逐轮复核。兼容、导出、部署和实际监控证据 / 成本控制：AC与EV尚未实际发生时留空；按同一周末截止口径比较PV、AC与EV并分析原因。 / 质量与职责控制（CR-004）：按Q01Q15对应范围记录环境、版本、预期/实际、失败和可核验证据。 / 交叉复核：R02牵头按具体成果安排非作者复核；同为作者时在原分配内换人。 / 质量费用：评估；沿用原任务及资源费用，不重复加算。实际执行、问题及复测证据见Excel质量与变更登记区，未发生时留空。 / 仿真估算依据: 自下而上估算：按WBS活动分资源人时×仿真费率汇总；复杂度、复用条件和工作量假设逐轮复核。兼容、导出、部署和实际监控证据 / 依赖说明: T4.2FS+0d; T3.16FS+0d; T3.19FS+0d
- 42: 暂时性实施规划：4人、8周模拟项目计划。 / 任务：T4.10 修复缺陷并复核需求覆盖 / 需求：FR-01～28, NFR-01～11, IF-01～04 / 预定交付物：缺陷修复、回归与未执行项记录 / 验收依据：AC-01～14 / 仿真负责人：R02 / 计划日期：2026-12-032026-12-07 / 工期：3工作日 / 分资源人时：R01=10；R02=16；R03=16；R04=14 / 前置关系：T4.3FS+0工作日; T4.4FS+0工作日; T4.6FS+0工作日; T4.7FS+0工作日; T4.8FS+0工作日; T4.9FS+0工作日; T4.5FS+0工作日 / 估算依据：按既有模块预留56人时修复与全量回归 / 不早于开始日期用于资源平衡，约束修改后重新核验每天8小时容量。 / 实际开始/完成、实际人时/成本、测试结果及接收凭据：留空。 / 估算方法：自下而上估算：按WBS活动分资源人时×仿真费率汇总；复杂度、复用条件和工作量假设逐轮复核。按既有模块预留56人时修复与全量回归 / 成本控制：AC与EV尚未实际发生时留空；按同一周末截止口径比较PV、AC与EV并分析原因。 / 质量与职责控制（CR-004）：按缺陷号修复、记录根因及版本；非作者复测，失败重开。 / 交叉复核：R04牵头按具体成果安排非作者复核；同为作者时在原分配内换人。 / 质量费用：内部缺陷修复/回归（混合）；沿用原任务及资源费用，不重复加算。实际执行、问题及复测证据见Excel质量与变更登记区，未发生时留空。 / 仿真估算依据: 自下而上估算：按WBS活动分资源人时×仿真费率汇总；复杂度、复用条件和工作量假设逐轮复核。按既有模块预留56人时修复与全量回归 / 依赖说明: T4.3FS+0d; T4.4FS+0d; T4.6FS+0d; T4.7FS+0d; T4.8FS+0d; T4.9FS+0d; T4.5FS+0d
- 43: 暂时性实施规划；下属活动为计划，未登记实际完成。
- 44: 暂时性实施规划：4人、8周模拟项目计划。 / 任务：T5.1 部署拟定试运行环境 / 需求：NFR-11 / 预定交付物：部署配置、迁移与回滚记录 / 验收依据：AC-14 / 仿真负责人：R01 / 计划日期：2026-11-232026-11-24 / 工期：2工作日 / 分资源人时：R01=6；R02=4；R03=0；R04=6 / 前置关系：T4.2SS+0工作日; T3.19FS+0工作日 / 估算依据：仿真独立试运行环境与部署窗口；按模块专长重新分工，测试部署成员兼工具及自动化开发；已确认SRS接口后先交付内部接口骨架，模块重叠编码；集成和验收等待全部相关模块完成 / 不早于开始日期用于资源平衡，约束修改后重新核验每天8小时容量。 / 实际开始/完成、实际人时/成本、测试结果及接收凭据：留空。 / 估算方法：自下而上估算：按WBS活动分资源人时×仿真费率汇总；复杂度、复用条件和工作量假设逐轮复核。仿真独立试运行环境与部署窗口；按模块专长重新分工，测试部署成员兼工具及自动化开发；已确认SRS接口后先交付内部接口骨架，模块重叠编码；集成和验收等待全部相关模块完成 / 成本控制：AC与EV尚未实际发生时留空；按同一周末截止口径比较PV、AC与EV并分析原因。 / 质量与职责控制（CR-004）：核对交付版本、操作资料、用户反馈和未完成项；不预填实际结论。 / 交叉复核：R04牵头按具体成果安排非作者复核；同为作者时在原分配内换人。 / 质量费用：交付/评估（混合）；沿用原任务及资源费用，不重复加算。实际执行、问题及复测证据见Excel质量与变更登记区，未发生时留空。 / 仿真估算依据: 自下而上估算：按WBS活动分资源人时×仿真费率汇总；复杂度、复用条件和工作量假设逐轮复核。仿真独立试运行环境与部署窗口；按模块专长重新分工，测试部署成员兼工具及自动化开发；已确认SRS接口后先交付内部接口骨架，模块重叠编码；集成和验收等待全部相关模块完成 / 依赖说明: T4.2SS+0d; T3.19FS+0d
- 45: 暂时性实施规划：4人、8周模拟项目计划。 / 任务：T5.2 安排业务试运行与反馈 / 需求：FR-01～28 / 预定交付物：试运行记录与反馈处理 / 验收依据：试运行评审 / 仿真负责人：R01 / 计划日期：2026-12-082026-12-09 / 工期：2工作日 / 分资源人时：R01=6；R02=2；R03=4；R04=6 / 前置关系：T4.10FS+0工作日; T5.1FS+0工作日 / 估算依据：用合成数据模拟业务试运行和反馈 / 不早于开始日期用于资源平衡，约束修改后重新核验每天8小时容量。 / 实际开始/完成、实际人时/成本、测试结果及接收凭据：留空。 / 估算方法：自下而上估算：按WBS活动分资源人时×仿真费率汇总；复杂度、复用条件和工作量假设逐轮复核。用合成数据模拟业务试运行和反馈 / 成本控制：AC与EV尚未实际发生时留空；按同一周末截止口径比较PV、AC与EV并分析原因。 / 质量与职责控制（CR-004）：核对交付版本、操作资料、用户反馈和未完成项；不预填实际结论。 / 交叉复核：R04牵头按具体成果安排非作者复核；同为作者时在原分配内换人。 / 质量费用：交付/评估（混合）；沿用原任务及资源费用，不重复加算。实际执行、问题及复测证据见Excel质量与变更登记区，未发生时留空。 / 仿真估算依据: 自下而上估算：按WBS活动分资源人时×仿真费率汇总；复杂度、复用条件和工作量假设逐轮复核。用合成数据模拟业务试运行和反馈 / 依赖说明: T4.10FS+0d; T5.1FS+0d
- 46: 暂时性实施规划：4人、8周模拟项目计划。 / 任务：T5.3 编写操作与开发维护说明 / 需求：NFR-11 / 预定交付物：企业、市、省和技术管理操作说明 / 验收依据：文档评审 / 仿真负责人：R01 / 计划日期：2026-11-302026-12-03 / 工期：4工作日 / 分资源人时：R01=12；R02=4；R03=8；R04=8 / 前置关系：T4.1FS+0工作日; T1.3FS+0工作日 / 估算依据：四角色操作手册及维护说明 / 不早于开始日期用于资源平衡，约束修改后重新核验每天8小时容量。 / 实际开始/完成、实际人时/成本、测试结果及接收凭据：留空。 / 估算方法：自下而上估算：按WBS活动分资源人时×仿真费率汇总；复杂度、复用条件和工作量假设逐轮复核。四角色操作手册及维护说明 / 成本控制：AC与EV尚未实际发生时留空；按同一周末截止口径比较PV、AC与EV并分析原因。 / 质量与职责控制（CR-004）：核对交付版本、操作资料、用户反馈和未完成项；不预填实际结论。 / 交叉复核：R04牵头按具体成果安排非作者复核；同为作者时在原分配内换人。 / 质量费用：交付/评估（混合）；沿用原任务及资源费用，不重复加算。实际执行、问题及复测证据见Excel质量与变更登记区，未发生时留空。 / 仿真估算依据: 自下而上估算：按WBS活动分资源人时×仿真费率汇总；复杂度、复用条件和工作量假设逐轮复核。四角色操作手册及维护说明 / 依赖说明: T4.1FS+0d; T1.3FS+0d
- 47: 暂时性实施规划：4人、8周模拟项目计划。 / 任务：T5.4 安排操作培训与演示 / 需求：项目交付 / 预定交付物：培训资料、演示与反馈 / 验收依据：培训反馈 / 仿真负责人：R01 / 计划日期：2026-12-102026-12-10 / 工期：1工作日 / 分资源人时：R01=4；R02=0；R03=2；R04=2 / 前置关系：T4.10FS+0工作日; T5.3FS+0工作日 / 估算依据：一次远程培训演示，无实际参加记录 / 不早于开始日期用于资源平衡，约束修改后重新核验每天8小时容量。 / 实际开始/完成、实际人时/成本、测试结果及接收凭据：留空。 / 估算方法：自下而上估算：按WBS活动分资源人时×仿真费率汇总；复杂度、复用条件和工作量假设逐轮复核。一次远程培训演示，无实际参加记录 / 成本控制：AC与EV尚未实际发生时留空；按同一周末截止口径比较PV、AC与EV并分析原因。 / 质量与职责控制（CR-004）：核对交付版本、操作资料、用户反馈和未完成项；不预填实际结论。 / 交叉复核：R04牵头按具体成果安排非作者复核；同为作者时在原分配内换人。 / 质量费用：交付/评估（混合）；沿用原任务及资源费用，不重复加算。实际执行、问题及复测证据见Excel质量与变更登记区，未发生时留空。 / 仿真估算依据: 自下而上估算：按WBS活动分资源人时×仿真费率汇总；复杂度、复用条件和工作量假设逐轮复核。一次远程培训演示，无实际参加记录 / 依赖说明: T4.10FS+0d; T5.3FS+0d
- 48: 暂时性实施规划：4人、8周模拟项目计划。 / 任务：T5.5 整理代码、配置和验证证据 / 需求：NFR-11, IF-01～04 / 预定交付物：构建代码、运行脚本与证据包 / 验收依据：SRS 9.5 / 仿真负责人：R04 / 计划日期：2026-12-082026-12-09 / 工期：2工作日 / 分资源人时：R01=4；R02=4；R03=2；R04=8 / 前置关系：T4.10FS+0工作日; T5.3FS+0工作日 / 估算依据：代码、配置、构建和证据包移交准备 / 不早于开始日期用于资源平衡，约束修改后重新核验每天8小时容量。 / 实际开始/完成、实际人时/成本、测试结果及接收凭据：留空。 / 估算方法：自下而上估算：按WBS活动分资源人时×仿真费率汇总；复杂度、复用条件和工作量假设逐轮复核。代码、配置、构建和证据包移交准备 / 成本控制：AC与EV尚未实际发生时留空；按同一周末截止口径比较PV、AC与EV并分析原因。 / 质量与职责控制（CR-004）：核对交付版本、操作资料、用户反馈和未完成项；不预填实际结论。 / 交叉复核：R01牵头按具体成果安排非作者复核；同为作者时在原分配内换人。 / 质量费用：交付/评估（混合）；沿用原任务及资源费用，不重复加算。实际执行、问题及复测证据见Excel质量与变更登记区，未发生时留空。 / 仿真估算依据: 自下而上估算：按WBS活动分资源人时×仿真费率汇总；复杂度、复用条件和工作量假设逐轮复核。代码、配置、构建和证据包移交准备 / 依赖说明: T4.10FS+0d; T5.3FS+0d
- 49: 暂时性实施规划：4人、8周模拟项目计划。 / 任务：T5.6 完成最终项目验收 / 需求：FR-01～28, NFR-01～11, IF-01～04 / 预定交付物：完整需求证据与实际交换接收凭据 / 验收依据：SRS 9.4, AC-10B / 仿真负责人：R01 / 计划日期：2026-12-112026-12-11 / 工期：1工作日 / 分资源人时：R01=4；R02=2；R03=2；R04=4 / 前置关系：T5.2FS+0工作日; T5.4FS+0工作日; T5.5FS+0工作日; T4.5FS+0工作日 / 估算依据：全范围验收评审，必须含AC-10B计划证据 / 不早于开始日期用于资源平衡，约束修改后重新核验每天8小时容量。 / 实际开始/完成、实际人时/成本、测试结果及接收凭据：留空。 / 预定质量标准： / Q16 最终交付 / 预定质量标准：FR/NFR/IF逐条证据；关键必需测试100%；阻断严重功能缺陷0；最终通过包含AC-10B / 依据：SRS 9.49.5 / 预定证据与条件：保留版本、前置数据、预期/实际与证据；人员、环境和执行记录待确认 / 实际执行人： / 实际日期/结果： / 估算方法：自下而上估算：按WBS活动分资源人时×仿真费率汇总；复杂度、复用条件和工作量假设逐轮复核。外部协议和验证条件未确认；不预置未经证实的模型参数。全范围验收评审，必须含AC-10B计划证据 / 成本控制：AC与EV尚未实际发生时留空；按同一周末截止口径比较PV、AC与EV并分析原因。 / 质量与职责控制（CR-004）：按SRS 9.49.5及Q16核对全部证据；AC-10B缺失不标为全部通过。 / 交叉复核：R04牵头按具体成果安排非作者复核；同为作者时在原分配内换人。 / 质量费用：评估；沿用原任务及资源费用，不重复加算。实际执行、问题及复测证据见Excel质量与变更登记区，未发生时留空。 / 仿真估算依据: 自下而上估算：按WBS活动分资源人时×仿真费率汇总；复杂度、复用条件和工作量假设逐轮复核。外部协议和验证条件未确认；不预置未经证实的模型参数。全范围验收评审，必须含AC-10B计划证据 / 依赖说明: T5.2FS+0d; T5.4FS+0d; T5.5FS+0d; T4.5FS+0d
- 50: 暂时性实施规划：4人、8周模拟项目计划。 / 任务：T5.7 汇总8周模拟的最终项目计划 / 需求：项目管理 / 预定交付物：完整项目计划与迭代说明 / 验收依据：完整计划及版本记录评审 / 仿真负责人：R01 / 计划日期：2026-12-112026-12-11 / 工期：1工作日 / 分资源人时：R01=4；R02=0；R03=0；R04=4 / 前置关系：T1.2FS+0工作日; T2.5FS+0工作日; T5.6SS+0工作日 / 估算依据：项目经理和QA并行复核最终计划，与仿真验收安排同日定稿；不等待或虚构实际执行结果；已确认SRS接口后先交付内部接口骨架，模块重叠编码；集成和验收等待全部相关模块完成 / 不早于开始日期用于资源平衡，约束修改后重新核验每天8小时容量。 / 实际开始/完成、实际人时/成本、测试结果及接收凭据：留空。 / 计划提交截止日期：2026-12-13；从计划开工日2026-10-19起计，第8自然周末提交。提交平台、格式及截止时刻待确定。 / 估算方法：自下而上估算：按WBS活动分资源人时×仿真费率汇总；复杂度、复用条件和工作量假设逐轮复核。项目经理和QA并行复核最终计划，与仿真验收安排同日定稿；不等待或虚构实际执行结果；已确认SRS接口后先交付内部接口骨架，模块重叠编码；集成和验收等待全部相关模块完成 / 成本控制：AC与EV尚未实际发生时留空；按同一周末截止口径比较PV、AC与EV并分析原因。 / 质量与职责控制（CR-004）：核对交付版本、操作资料、用户反馈和未完成项；不预填实际结论。 / 交叉复核：R04牵头按具体成果安排非作者复核；同为作者时在原分配内换人。 / 质量费用：交付/评估（混合）；沿用原任务及资源费用，不重复加算。实际执行、问题及复测证据见Excel质量与变更登记区，未发生时留空。 / 仿真估算依据: 自下而上估算：按WBS活动分资源人时×仿真费率汇总；复杂度、复用条件和工作量假设逐轮复核。项目经理和QA并行复核最终计划，与仿真验收安排同日定稿；不等待或虚构实际执行结果；已确认SRS接口后先交付内部接口骨架，模块重叠编码；集成和验收等待全部相关模块完成 / 依赖说明: T1.2FS+0d; T2.5FS+0d; T5.6SS+0d
- 51: 用于记录C06C13的非人工和间接预算；不会重复计算直接人工。管理储备只在总计划Cost1中单列，不计入原生成本控制基准。
- 52: 分周费用台账，工期仅表示所属周，不表示开发工作量。金额为仿真预算，实际支出留空。 / 全项目当周PV：14903 元；累计PV：14903 元。PV来自Excel成本基准，不含管理储备。AC、EV、偏差原因和CR登记见Excel逐周控制表；未发生的数据留空。 / 周复核目标：需求／WBS与估算方法对应，识别成本与储备边界；预定产出：估算依据、成本控制与版本记录 / 质量费用观察：预防、评估、内部/外部缺陷按真实用途登记，原成本基准与分周预算不变；质量用途分类不作为新增任务成本。
- 53: 分周费用台账，工期仅表示所属周，不表示开发工作量。金额为仿真预算，实际支出留空。 / 全项目当周PV：10830.75 元；累计PV：25733.75 元。PV来自Excel成本基准，不含管理储备。AC、EV、偏差原因和CR登记见Excel逐周控制表；未发生的数据留空。 / 周复核目标：细化WBS、外部协议条件及不确定性，检查资源和储备缺口；预定产出：阶段重点复核与风险响应说明 / 质量费用观察：预防、评估、内部/外部缺陷按真实用途登记，原成本基准与分周预算不变；质量用途分类不作为新增任务成本。
- 54: 分周费用台账，工期仅表示所属周，不表示开发工作量。金额为仿真预算，实际支出留空。 / 全项目当周PV：12440.75 元；累计PV：38174.5 元。PV来自Excel成本基准，不含管理储备。AC、EV、偏差原因和CR登记见Excel逐周控制表；未发生的数据留空。 / 周复核目标：检查业务活动投入与预期产出，复核剩余工作估算；预定产出：周复核结论及实际偏差原因 / 质量费用观察：预防、评估、内部/外部缺陷按真实用途登记，原成本基准与分周预算不变；质量用途分类不作为新增任务成本。
- 55: 分周费用台账，工期仅表示所属周，不表示开发工作量。金额为仿真预算，实际支出留空。 / 全项目当周PV：14153.9966666667 元；累计PV：52328.4966666667 元。PV来自Excel成本基准，不含管理储备。AC、EV、偏差原因和CR登记见Excel逐周控制表；未发生的数据留空。 / 周复核目标：复核主业务链、累计成本基准和完成工作预算口径；预定产出：阶段重点复核与受控修订 / 质量费用观察：预防、评估、内部/外部缺陷按真实用途登记，原成本基准与分周预算不变；质量用途分类不作为新增任务成本。
- 56: 分周费用台账，工期仅表示所属周，不表示开发工作量。金额为仿真预算，实际支出留空。 / 全项目当周PV：14098.0033333333 元；累计PV：66426.5 元。PV来自Excel成本基准，不含管理储备。AC、EV、偏差原因和CR登记见Excel逐周控制表；未发生的数据留空。 / 周复核目标：复核模块集成、剩余工作量及外部条件变化；预定产出：集成阶段估算前提与风险说明 / 质量费用观察：预防、评估、内部/外部缺陷按真实用途登记，原成本基准与分周预算不变；质量用途分类不作为新增任务成本。
- 57: 分周费用台账，工期仅表示所属周，不表示开发工作量。金额为仿真预算，实际支出留空。 / 全项目当周PV：15284 元；累计PV：81710.5 元。PV来自Excel成本基准，不含管理储备。AC、EV、偏差原因和CR登记见Excel逐周控制表；未发生的数据留空。 / 周复核目标：复核质量活动、验证费用及真实交换条件；预定产出：阶段重点复核与成本预测 / 质量费用观察：预防、评估、内部/外部缺陷按真实用途登记，原成本基准与分周预算不变；质量用途分类不作为新增任务成本。
- 58: 分周费用台账，工期仅表示所属周，不表示开发工作量。金额为仿真预算，实际支出留空。 / 全项目当周PV：14513.0033333333 元；累计PV：96223.5033333333 元。PV来自Excel成本基准，不含管理储备。AC、EV、偏差原因和CR登记见Excel逐周控制表；未发生的数据留空。 / 周复核目标：复核验证、缺陷修复和交付准备的进度成本影响；预定产出：缺陷及成本偏差处理记录 / 质量费用观察：预防、评估、内部/外部缺陷按真实用途登记，原成本基准与分周预算不变；质量用途分类不作为新增任务成本。
- 59: 分周费用台账，工期仅表示所属周，不表示开发工作量。金额为仿真预算，实际支出留空。 / 全项目当周PV：10628.9966666667 元；累计PV：106852.5 元。PV来自Excel成本基准，不含管理储备。AC、EV、偏差原因和CR登记见Excel逐周控制表；未发生的数据留空。 / 周复核目标：复核最终计划、范围质量覆盖与全部真实变更证据；预定产出：最终计划、变更单与提交历史截图 / 质量费用观察：预防、评估、内部/外部缺陷按真实用途登记，原成本基准与分周预算不变；质量用途分类不作为新增任务成本。
